# BWCRM V1.0 项目时间安排

Schedule from MS Project, 2007-09-18 to 2008-01-23, A marks actual dates.
HDU

## Calendars

- 标准: Mon-Fri 08:00-12:00, 13:00-17:00; Sat-Sun off. Exceptions (off unless hours are given): 2007-09-30 08:00-12:00, 13:00-17:00, 2007-10-21 08:00-12:00, 13:00-17:00, 2007-11-04 08:00-12:00, 13:00-17:00, 2007-11-10 08:00-12:00, 13:00-17:00, 2007-11-18 08:00-12:00, 13:00-17:00, 2007-12-09 08:00-12:00, 13:00-17:00, 2007-12-29 08:00-12:00, 13:00-17:00, 2008-01-06 08:00-12:00, 13:00-17:00, 2008-01-13 08:00-12:00, 13:00-17:00, 2008-01-19 to 2008-01-20 08:00-12:00, 13:00-17:00.

## Resources

| Resource |
| --- |
| 徐佳文 |
| 张万军 |
| 施懿斓 |
| 魏致晟 |
| 袁远 |
| 金鹏爱 |
| 罗海明 |
| 林啸 |
| 姜雪芬 |
| 周科存 |

## Schedule

| ID | WBS | Task | Duration | Start | Finish | Complete | Remaining | Baseline start | Baseline finish | Baseline duration | Baseline 1 start | Baseline 1 finish | Total slack | Constraint | Resources | Work | Actual work |
| --- | --- | --- | --- | --- | --- | --- | --- | --- | --- | --- | --- | --- | --- | --- | --- | --- | --- |
| 1 | 1 | **基于Web2.0的IT企业管理信息系统_1.0** | 103d? | 2007-09-18 A | 2008-01-23 | 89% | 11.19d? | 2007-09-18 | 2008-01-24 | 101d? | 2007-09-18 | 2008-01-24 | 0d |  | 施懿斓 | 26729.6h | 19144.9h |
| 2 | 1.1 | **项目例会** | 88.25d | 2007-09-21 A | 2008-01-11 | 83% | 14.71d | 2007-09-21 | 2008-01-18 | 92.25d | 2007-09-21 | 2008-01-18 | 11.75d |  | 施懿斓 | 986h | 236h |
| 3 | 1.1.1 | 项目例会 1 | 2h | 2007-09-21 A | 2007-09-21 A | 100% |  | 2007-09-21 | 2007-09-21 | 2h | 2007-09-21 | 2007-09-21 |  | finish no later than 2007-09-21 | 姜雪芬; 金鹏爱; 林啸; 罗海明; 施懿斓; 魏致晟; 袁远; 徐佳文 | 16h | 16h |
| 4 | 1.1.2 | 项目例会 2 | 2h | 2007-09-28 A | 2007-09-28 A | 100% |  | 2007-09-28 | 2007-09-28 | 2h | 2007-09-28 | 2007-09-28 |  | finish no later than 2007-09-28 | 姜雪芬; 金鹏爱; 林啸; 袁远; 魏致晟; 罗海明; 施懿斓; 徐佳文 | 16h | 16h |
| 5 | 1.1.3 | 项目例会 3 | 2h | 2007-10-05 A | 2007-10-05 A | 100% |  | 2007-10-05 | 2007-10-05 | 2h | 2007-10-05 | 2007-10-05 |  | finish no later than 2007-10-05 | 姜雪芬; 金鹏爱; 林啸; 袁远; 魏致晟; 罗海明; 施懿斓; 徐佳文 | 16h | 16h |
| 6 | 1.1.4 | 项目例会 4 | 2h | 2007-10-12 A | 2007-10-12 A | 100% |  | 2007-10-12 | 2007-10-12 | 2h | 2007-10-12 | 2007-10-12 |  | finish no later than 2007-10-12 | 姜雪芬; 金鹏爱; 林啸; 袁远; 魏致晟; 罗海明; 施懿斓; 徐佳文 | 16h | 16h |
| 7 | 1.1.5 | 项目例会 5 | 2h | 2007-10-19 A | 2007-10-19 A | 100% |  | 2007-10-19 | 2007-10-19 | 2h | 2007-10-19 | 2007-10-19 |  | finish no later than 2007-10-19 | 金鹏爱; 林啸; 罗海明; 施懿斓; 魏致晟; 袁远; 徐佳文 | 14h | 14h |
| 8 | 1.1.6 | 项目例会 6 | 2h | 2007-10-26 A | 2007-10-26 A | 100% |  | 2007-10-26 | 2007-10-26 | 2h | 2007-10-26 | 2007-10-26 |  | finish no later than 2007-10-26 | 姜雪芬; 金鹏爱; 林啸; 罗海明; 施懿斓; 魏致晟; 袁远; 徐佳文 | 16h | 16h |
| 9 | 1.1.7 | 项目例会 7 | 2h | 2007-11-02 | 2007-11-02 |  |  | 2007-11-02 | 2007-11-02 | 0h | 2007-11-02 | 2007-11-02 | 68.75d | start no earlier than 2007-11-02 | 姜雪芬; 金鹏爱; 林啸; 罗海明; 施懿斓; 魏致晟; 袁远; 徐佳文 | 16h |  |
| 10 | 1.1.8 | 项目例会 8 | 2h | 2007-11-09 A | 2007-11-09 A | 100% |  | 2007-11-09 | 2007-11-09 | 2h | 2007-11-09 | 2007-11-09 |  | finish no later than 2007-11-09 | 姜雪芬; 金鹏爱; 林啸; 罗海明; 施懿斓; 魏致晟; 袁远; 徐佳文 | 16h | 16h |
| 11 | 1.1.9 | 项目例会 9 | 2h | 2007-11-16 A | 2007-11-16 A | 100% |  | 2007-11-16 | 2007-11-16 | 2h | 2007-11-16 | 2007-11-16 |  | finish no later than 2007-11-16 | 金鹏爱; 林啸; 罗海明; 施懿斓; 魏致晟; 袁远; 徐佳文 | 14h | 14h |
| 12 | 1.1.10 | 项目例会 10 | 2h | 2007-11-23 A | 2007-11-23 A | 100% |  | 2007-11-23 | 2007-11-23 | 2h | 2007-11-23 | 2007-11-23 |  | finish no later than 2007-11-23 | 姜雪芬; 金鹏爱; 林啸; 罗海明; 施懿斓; 魏致晟; 袁远; 徐佳文 | 16h | 16h |
| 13 | 1.1.11 | 项目例会 11 | 2h | 2007-11-30 | 2007-11-30 |  |  | 2007-11-30 | 2007-11-30 | 0h | 2007-11-30 | 2007-11-30 | 45.75d | start no earlier than 2007-11-30 | 金鹏爱; 林啸; 罗海明; 施懿斓; 魏致晟; 袁远; 徐佳文 | 14h |  |
| 14 | 1.1.12 | 项目例会 12 | 2h | 2007-12-07 A | 2007-12-07 A | 100% |  | 2007-12-07 | 2007-12-07 | 2h | 2007-12-07 | 2007-12-07 |  | finish no later than 2007-12-07 | 金鹏爱; 林啸; 罗海明; 施懿斓; 魏致晟; 徐佳文; 袁远 | 14h | 14h |
| 15 | 1.1.13 | 项目例会 13 | 2h | 2007-12-14 A | 2007-12-14 A | 100% |  | 2007-12-14 | 2007-12-14 | 2h | 2007-12-14 | 2007-12-14 |  | finish no later than 2007-12-14 | 姜雪芬; 金鹏爱; 林啸; 罗海明; 施懿斓; 魏致晟; 徐佳文; 袁远 | 16h | 16h |
| 16 | 1.1.14 | 项目例会 14 | 2h | 2007-12-21 A | 2007-12-21 A | 100% |  | 2007-12-21 | 2007-12-21 | 2h | 2007-12-21 | 2007-12-21 |  | finish no later than 2007-12-21 | 姜雪芬; 金鹏爱; 林啸; 罗海明; 施懿斓; 魏致晟; 徐佳文; 袁远 | 16h | 16h |
| 17 | 1.1.15 | 项目例会 15 | 2h | 2007-12-27 A | 2007-12-28 A | 100% |  | 2007-12-28 | 2007-12-28 | 2h | 2007-12-28 | 2007-12-28 |  | finish no later than 2007-12-28 | 姜雪芬; 金鹏爱; 林啸; 罗海明; 施懿斓; 魏致晟; 徐佳文; 袁远 | 16h | 16h |
| 18 | 1.1.16 | 项目例会 16 | 2h | 2008-01-04 | 2008-01-04 |  |  | 2008-01-04 | 2008-01-04 | 2h | 2008-01-04 | 2008-01-04 | 18.75d | start no earlier than 2008-01-04 | 姜雪芬; 金鹏爱; 林啸; 罗海明; 施懿斓; 魏致晟; 徐佳文; 袁远 | 16h |  |
| 19 | 1.1.17 | 项目例会 17 | 2h | 2008-01-11 A | 2008-01-11 A | 100% |  | 2008-01-11 | 2008-01-11 | 2h | 2008-01-11 | 2008-01-11 |  | finish no later than 2008-01-11 | 金鹏爱; 林啸; 罗海明; 施懿斓; 魏致晟; 徐佳文; 袁远; 周科存 | 16h | 16h |
| 20 | 1.1.18 | 项目例会 18 | 2h | 2007-09-24 A | 2007-09-24 A | 100% |  | 2008-01-18 | 2008-01-18 | 2h | 2008-01-18 | 2008-01-18 |  | finish no later than 2008-01-18 | 金鹏爱; 林啸; 罗海明; 施懿斓; 魏致晟; 徐佳文; 周科存; 袁远 | 16h | 16h |
| 21 | 1.2 | **质量保证检查** | 83.31d | 2007-09-28 A | 2008-01-11 | 81% | 15.62d | 2007-09-28 | 2008-01-11 | 82.31d | 2007-09-28 | 2008-01-11 | 11.69d |  | 徐佳文 | 706.5h | 35h |
| 22 | 1.2.1 | 质量保证检查 1 | 2.5h | 2007-09-28 A | 2007-09-28 A | 100% |  | 2007-09-28 | 2007-09-28 | 2.5h | 2007-09-28 | 2007-09-28 |  | finish no later than 2007-09-28 | 徐佳文 | 2.5h | 2.5h |
| 23 | 1.2.2 | 质量保证检查 2 | 2.5h | 2007-10-05 | 2007-10-05 |  |  | 2007-10-05 | 2007-10-05 | 2.5h | 2007-10-05 | 2007-10-05 | 89.69d | start no earlier than 2007-10-05 | 徐佳文 | 2.5h |  |
| 24 | 1.2.3 | 质量保证检查 3 | 2.5h | 2007-10-12 | 2007-10-12 |  |  | 2007-10-12 | 2007-10-12 | 2.5h | 2007-10-12 | 2007-10-12 | 84.69d | start no earlier than 2007-10-12 | 徐佳文 | 2.5h |  |
| 25 | 1.2.4 | 质量保证检查 4 | 2.5h | 2007-10-19 A | 2007-10-19 A | 100% |  | 2007-10-19 | 2007-10-19 | 2.5h | 2007-10-19 | 2007-10-19 |  | start no earlier than 2007-10-19 | 徐佳文 | 2.5h | 2.5h |
| 26 | 1.2.5 | 质量保证检查 5 | 2.5h | 2007-10-26 A | 2007-10-26 A | 100% |  | 2007-10-26 | 2007-10-26 | 2.5h | 2007-10-26 | 2007-10-26 |  | start no earlier than 2007-10-26 | 徐佳文 | 2.5h | 2.5h |
| 27 | 1.2.6 | 质量保证检查 6 | 2.5h | 2007-11-02 A | 2007-11-02 A | 100% |  | 2007-11-02 | 2007-11-02 | 2.5h | 2007-11-02 | 2007-11-02 |  | start no earlier than 2007-11-02 | 徐佳文 | 2.5h | 2.5h |
| 28 | 1.2.7 | 质量保证检查 7 | 2.5h | 2007-11-09 A | 2007-11-09 A | 100% |  | 2007-11-09 | 2007-11-09 | 2.5h | 2007-11-09 | 2007-11-09 |  | start no earlier than 2007-11-09 | 徐佳文 | 2.5h | 2.5h |
| 29 | 1.2.8 | 质量保证检查 8 | 2.5h | 2007-11-16 A | 2007-11-16 A | 100% |  | 2007-11-16 | 2007-11-16 | 2.5h | 2007-11-16 | 2007-11-16 |  | start no earlier than 2007-11-16 | 徐佳文 | 2.5h | 2.5h |
| 30 | 1.2.9 | 质量保证检查 9 | 2.5h | 2007-11-23 | 2007-11-23 |  |  | 2007-11-23 | 2007-11-23 | 2.5h | 2007-11-23 | 2007-11-23 | 50.69d | start no earlier than 2007-11-23 | 徐佳文 | 2.5h |  |
| 31 | 1.2.10 | 质量保证检查 10 | 2.5h | 2007-11-30 A | 2007-11-30 A | 100% |  | 2007-11-30 | 2007-11-30 | 2.5h | 2007-11-30 | 2007-11-30 |  | start no earlier than 2007-11-30 | 徐佳文 | 2.5h | 2.5h |
| 32 | 1.2.11 | 质量保证检查 11 | 2.5h | 2007-12-07 A | 2007-12-07 A | 100% |  | 2007-12-07 | 2007-12-07 | 2.5h | 2007-12-07 | 2007-12-07 |  | start no earlier than 2007-12-07 | 徐佳文 | 2.5h | 2.5h |
| 33 | 1.2.12 | 质量保证检查 12 | 2.5h | 2007-12-14 A | 2007-12-14 A | 100% |  | 2007-12-14 | 2007-12-14 | 2.5h | 2007-12-14 | 2007-12-14 |  | start no earlier than 2007-12-14 | 徐佳文 | 2.5h | 2.5h |
| 34 | 1.2.13 | 质量保证检查 13 | 2.5h | 2007-12-21 A | 2007-12-21 A | 100% |  | 2007-12-21 | 2007-12-21 | 2.5h | 2007-12-21 | 2007-12-21 |  | start no earlier than 2007-12-21 | 徐佳文 | 2.5h | 2.5h |
| 35 | 1.2.14 | 质量保证检查 14 | 2.5h | 2007-12-28 A | 2007-12-28 A | 100% |  | 2007-12-28 | 2007-12-28 | 2.5h | 2007-12-28 | 2007-12-28 |  | start no earlier than 2007-12-28 | 徐佳文 | 2.5h | 2.5h |
| 36 | 1.2.15 | 质量保证检查 15 | 2.5h | 2008-01-04 A | 2008-01-04 A | 100% |  | 2008-01-04 | 2008-01-04 | 2.5h | 2008-01-04 | 2008-01-04 |  | start no earlier than 2008-01-04 | 徐佳文 | 2.5h | 2.5h |
| 37 | 1.2.16 | 质量保证检查 16 | 2.5h | 2008-01-11 A | 2008-01-11 A | 100% |  | 2008-01-11 | 2008-01-11 | 2.5h | 2008-01-11 | 2008-01-11 |  | start no earlier than 2008-01-11 | 徐佳文 | 2.5h | 2.5h |

| ID | WBS | Task | Duration | Start | Finish | Complete | Remaining | Baseline start | Baseline finish | Baseline duration | Baseline 1 start | Baseline 1 finish | Total slack | Constraint | Resources | Work | Actual work |
| --- | --- | --- | --- | --- | --- | --- | --- | --- | --- | --- | --- | --- | --- | --- | --- | --- | --- |
| 38 | 1.3 | **项目管理** | 93d | 2007-09-28 A | 2008-01-21 | 94% | 5.17d | 2007-09-28 | 2008-01-21 | 90d | 2007-09-28 | 2008-01-21 | 2d |  | 施懿斓 | 888h | 144h |
| 39 | 1.3.1 | 项目管理 1 | 1d | 2007-09-28 A | 2007-09-28 A | 100% |  | 2007-09-28 | 2007-09-28 | 1d | 2007-09-28 | 2007-09-28 |  | start no earlier than 2007-09-28 | 施懿斓 | 8h | 8h |
| 40 | 1.3.2 | 项目管理 2 | 1d | 2007-10-05 A | 2007-10-05 A | 100% |  | 2007-10-05 | 2007-10-05 | 1d | 2007-10-05 | 2007-10-05 |  | start no earlier than 2007-10-05 | 施懿斓 | 8h | 8h |
| 41 | 1.3.3 | 项目管理 3 | 1d | 2007-10-12 A | 2007-10-12 A | 100% |  | 2007-10-12 | 2007-10-12 | 1d | 2007-10-12 | 2007-10-12 |  | start no earlier than 2007-10-12 | 施懿斓 | 8h | 8h |
| 42 | 1.3.4 | 项目管理 4 | 1d | 2007-10-15 A | 2007-10-15 A | 100% |  | 2007-10-15 | 2007-10-15 | 1d | 2007-10-15 | 2007-10-15 |  | start no earlier than 2007-10-15 | 施懿斓 | 8h | 8h |
| 43 | 1.3.5 | 项目管理 5 | 1d | 2007-10-22 A | 2007-10-22 A | 100% |  | 2007-10-22 | 2007-10-22 | 1d | 2007-10-22 | 2007-10-22 |  | start no earlier than 2007-10-22 | 施懿斓 | 8h | 8h |
| 44 | 1.3.6 | 项目管理 6 | 1d | 2007-10-29 A | 2007-10-29 A | 100% |  | 2007-10-29 | 2007-10-29 | 1d | 2007-10-29 | 2007-10-29 |  | start no earlier than 2007-10-29 | 施懿斓 | 8h | 8h |
| 45 | 1.3.7 | 项目管理 7 | 1d | 2007-11-05 A | 2007-11-05 A | 100% |  | 2007-11-05 | 2007-11-05 | 1d | 2007-11-05 | 2007-11-05 |  | start no earlier than 2007-11-05 | 施懿斓 | 8h | 8h |
| 46 | 1.3.8 | 项目管理 8 | 1d | 2007-11-12 A | 2007-11-12 A | 100% |  | 2007-11-12 | 2007-11-12 | 1d | 2007-11-12 | 2007-11-12 |  | start no earlier than 2007-11-12 | 施懿斓 | 8h | 8h |
| 47 | 1.3.9 | 项目管理 9 | 1d | 2007-11-19 A | 2007-11-19 A | 100% |  | 2007-11-19 | 2007-11-19 | 1d | 2007-11-19 | 2007-11-19 |  | start no earlier than 2007-11-19 | 施懿斓 | 8h | 8h |
| 48 | 1.3.10 | 项目管理 10 | 1d | 2007-11-26 A | 2007-11-26 A | 100% |  | 2007-11-26 | 2007-11-26 | 1d | 2007-11-26 | 2007-11-26 |  | start no earlier than 2007-11-26 | 施懿斓 | 8h | 8h |
| 49 | 1.3.11 | 项目管理 11 | 1d | 2007-12-03 A | 2007-12-03 A | 100% |  | 2007-12-03 | 2007-12-03 | 1d | 2007-12-03 | 2007-12-03 |  | start no earlier than 2007-12-03 | 施懿斓 | 8h | 8h |
| 50 | 1.3.12 | 项目管理 12 | 1d | 2007-12-10 A | 2007-12-10 A | 100% |  | 2007-12-10 | 2007-12-10 | 1d | 2007-12-10 | 2007-12-10 |  | start no earlier than 2007-12-10 | 施懿斓 | 8h | 8h |
| 51 | 1.3.13 | 项目管理 13 | 1d | 2007-12-17 A | 2007-12-17 A | 100% |  | 2007-12-17 | 2007-12-17 | 1d | 2007-12-17 | 2007-12-17 |  | start no earlier than 2007-12-17 | 施懿斓 | 8h | 8h |
| 52 | 1.3.14 | 项目管理 14 | 1d | 2007-12-24 A | 2007-12-24 A | 100% |  | 2007-12-24 | 2007-12-24 | 1d | 2007-12-24 | 2007-12-24 |  | start no earlier than 2007-12-24 | 施懿斓 | 8h | 8h |
| 53 | 1.3.15 | 项目管理 15 | 1d | 2007-12-31 | 2007-12-31 |  |  | 2007-12-31 | 2007-12-31 | 1d | 2007-12-31 | 2007-12-31 | 22d | start no earlier than 2007-12-31 | 施懿斓 | 8h |  |
| 54 | 1.3.16 | 项目管理 16 | 1d | 2008-01-07 A | 2008-01-07 A | 100% |  | 2008-01-07 | 2008-01-07 | 1d | 2008-01-07 | 2008-01-07 |  | start no earlier than 2008-01-07 | 施懿斓 | 8h | 8h |
| 55 | 1.3.17 | 项目管理 17 | 1d | 2008-01-14 A | 2008-01-14 A | 100% |  | 2008-01-14 | 2008-01-14 | 1d | 2008-01-14 | 2008-01-14 |  | start no earlier than 2008-01-14 | 施懿斓 | 8h | 8h |
| 56 | 1.3.18 | 项目管理 18 | 1d | 2008-01-21 A | 2008-01-21 A | 100% |  | 2008-01-21 | 2008-01-21 | 1d | 2008-01-21 | 2008-01-21 |  | start no earlier than 2008-01-21 | 施懿斓 | 8h | 8h |
| 57 | 1.4 | **配置管理** | 90d | 2007-09-28 A | 2008-01-18 | 99% | 0d | 2007-09-28 | 2008-01-18 | 88d | 2007-09-28 | 2008-01-18 | 0d |  | 徐佳文 | 856h | 144h |
| 58 | 1.4.1 | 配置管理 1 | 1d | 2007-09-28 A | 2007-09-28 A | 100% |  | 2007-09-28 | 2007-09-28 | 1d | 2007-09-28 | 2007-09-28 |  | start no earlier than 2007-09-28 | 徐佳文 | 8h | 8h |
| 59 | 1.4.2 | 配置管理 2 | 1d | 2007-10-05 A | 2007-10-05 A | 100% |  | 2007-10-05 | 2007-10-05 | 1d | 2007-10-05 | 2007-10-05 |  | start no earlier than 2007-10-05 | 徐佳文 | 8h | 8h |
| 60 | 1.4.3 | 配置管理 3 | 1d | 2007-10-12 A | 2007-10-12 A | 100% |  | 2007-10-12 | 2007-10-12 | 1d | 2007-10-12 | 2007-10-12 |  | start no earlier than 2007-10-12 | 徐佳文 | 8h | 8h |
| 61 | 1.4.4 | 配置管理 4 | 1d | 2007-10-19 A | 2007-10-19 A | 100% |  | 2007-10-19 | 2007-10-19 | 1d | 2007-10-19 | 2007-10-19 |  | start no earlier than 2007-10-19 | 徐佳文 | 8h | 8h |
| 62 | 1.4.5 | 配置管理 5 | 1d | 2007-10-26 A | 2007-10-26 A | 100% |  | 2007-10-26 | 2007-10-26 | 1d | 2007-10-26 | 2007-10-26 |  | start no earlier than 2007-10-26 | 徐佳文 | 8h | 8h |
| 63 | 1.4.6 | 配置管理 6 | 1d | 2007-11-02 A | 2007-11-02 A | 100% |  | 2007-11-02 | 2007-11-02 | 1d | 2007-11-02 | 2007-11-02 |  | start no earlier than 2007-11-02 | 徐佳文 | 8h | 8h |
| 64 | 1.4.7 | 配置管理 7 | 1d | 2007-11-09 A | 2007-11-09 A | 100% |  | 2007-11-09 | 2007-11-09 | 1d | 2007-11-09 | 2007-11-09 |  | start no earlier than 2007-11-09 | 徐佳文 | 8h | 8h |
| 65 | 1.4.8 | 配置管理 8 | 1d | 2007-11-16 A | 2007-11-16 A | 100% |  | 2007-11-16 | 2007-11-16 | 1d | 2007-11-16 | 2007-11-16 |  | start no earlier than 2007-11-16 | 徐佳文 | 8h | 8h |
| 66 | 1.4.9 | 配置管理 9 | 1d | 2007-11-23 A | 2007-11-23 A | 100% |  | 2007-11-23 | 2007-11-23 | 1d | 2007-11-23 | 2007-11-23 |  | start no earlier than 2007-11-23 | 徐佳文 | 8h | 8h |
| 67 | 1.4.10 | 配置管理 10 | 1d | 2007-11-30 A | 2007-11-30 A | 100% |  | 2007-11-30 | 2007-11-30 | 1d | 2007-11-30 | 2007-11-30 |  | start no earlier than 2007-11-30 | 徐佳文 | 8h | 8h |
| 68 | 1.4.11 | 配置管理 11 | 1d | 2007-12-07 A | 2007-12-07 A | 100% |  | 2007-12-07 | 2007-12-07 | 1d | 2007-12-07 | 2007-12-07 |  | start no earlier than 2007-12-07 | 徐佳文 | 8h | 8h |
| 69 | 1.4.12 | 配置管理 12 | 1d | 2007-12-14 A | 2007-12-14 A | 100% |  | 2007-12-14 | 2007-12-14 | 1d | 2007-12-14 | 2007-12-14 |  | start no earlier than 2007-12-14 | 徐佳文 | 8h | 8h |
| 70 | 1.4.13 | 配置管理 13 | 1d | 2007-12-21 A | 2007-12-21 A | 100% |  | 2007-12-21 | 2007-12-21 | 1d | 2007-12-21 | 2007-12-21 |  | start no earlier than 2007-12-21 | 徐佳文 | 8h | 8h |
| 71 | 1.4.14 | 配置管理 14 | 1d | 2007-12-28 A | 2007-12-28 A | 100% |  | 2007-12-28 | 2007-12-28 | 1d | 2007-12-28 | 2007-12-28 |  | start no earlier than 2007-12-28 | 徐佳文 | 8h | 8h |
| 72 | 1.4.15 | 配置管理 15 | 1d | 2008-01-04 A | 2008-01-04 A | 100% |  | 2008-01-04 | 2008-01-04 | 1d | 2008-01-04 | 2008-01-04 |  | start no earlier than 2008-01-04 | 徐佳文 | 8h | 8h |
| 73 | 1.4.16 | 配置管理 16 | 1d | 2008-01-11 A | 2008-01-11 A | 100% |  | 2008-01-11 | 2008-01-11 | 1d | 2008-01-11 | 2008-01-11 |  | start no earlier than 2008-01-11 | 徐佳文 | 8h | 8h |
| 74 | 1.4.17 | 配置管理 17 | 1d | 2008-01-18 A | 2008-01-18 A | 100% |  | 2008-01-18 | 2008-01-18 | 1d | 2008-01-18 | 2008-01-18 |  | start no earlier than 2008-01-18 | 徐佳文 | 8h | 8h |

| ID | WBS | Task | Type | Duration | Start | Finish | Predecessors | Complete | Remaining | Baseline start | Baseline finish | Baseline duration | Baseline 1 start | Baseline 1 finish | Total slack | Free slack | Constraint | Resources | Work | Actual work |
| --- | --- | --- | --- | --- | --- | --- | --- | --- | --- | --- | --- | --- | --- | --- | --- | --- | --- | --- | --- | --- |
| 75 | 1.5 | **项目立项** |  | 5d | 2007-09-18 A | 2007-09-24 A |  | 100% |  | 2007-09-18 | 2007-09-24 | 5d | 2007-09-18 | 2007-09-24 |  |  |  | 施懿斓 | 98.91h | 98.91h |
| 76 | 1.5.1 | 编写立项报告（可行性分析报告） |  | 5d | 2007-09-18 A | 2007-09-24 A |  | 100% |  | 2007-09-18 | 2007-09-24 | 5d | 2007-09-18 | 2007-09-24 |  |  | start no earlier than 2007-09-18 | 施懿斓 | 40h | 40h |
| 77 | 1.5.2 | 立项报告评审 | milestone | 0.19d | 2007-09-24 A | 2007-09-24 A |  | 100% |  | 2007-09-24 | 2007-09-24 | 0.19d | 2007-09-24 | 2007-09-24 |  |  |  | 姜雪芬; 金鹏爱; 林啸; 罗海明; 施懿斓; 徐佳文; 张万军 | 10.91h | 10.91h |
| 78 | 1.5.3 | 项目立项（下发立项通知书） |  | 1d | 2007-09-24 A | 2007-09-24 A |  | 100% |  | 2007-09-24 | 2007-09-24 | 1d | 2007-09-24 | 2007-09-24 |  |  |  | 张万军 | 8h | 8h |
| 79 | 1.6 | **项目策划初稿** |  | 17d | 2007-09-24 A | 2007-10-15 A |  | 100% |  | 2007-09-24 | 2007-10-15 | 17d | 2007-09-24 | 2007-10-15 |  |  |  | 施懿斓 | 281.6h | 281.6h |
| 80 | 1.6.1 | 项目开发计划初稿 |  | 11d | 2007-09-25 A | 2007-10-08 A |  | 100% |  | 2007-09-25 | 2007-10-08 | 11d | 2007-09-25 | 2007-10-08 |  |  | finish no earlier than 2007-10-08 | 施懿斓 | 88h | 88h |
| 81 | 1.6.2 | 可行性分析（项目开发报告） |  | 5d | 2007-09-24 A | 2007-09-28 A |  | 100% |  | 2007-09-24 | 2007-09-28 | 5d | 2007-09-24 | 2007-09-28 |  |  |  | 施懿斓 | 40h | 40h |
| 82 | 1.6.3 | 配置管理计划初稿 |  | 1d | 2007-10-08 A | 2007-10-08 A |  | 100% |  | 2007-10-08 | 2007-10-08 | 1d | 2007-10-08 | 2007-10-08 |  |  | start no earlier than 2007-10-08 | 徐佳文 | 8h | 8h |
| 83 | 1.6.4 | 质量保证计划初稿 |  | 48h | 2007-10-08 A | 2007-10-15 A |  | 100% |  | 2007-10-08 | 2007-10-15 | 48h | 2007-10-08 | 2007-10-15 |  |  | start no earlier than 2007-10-08 | 徐佳文 [20%] | 9.6h | 9.6h |
| 84 | 1.7 | **需求管理** |  | 34d | 2007-09-18 A | 2007-10-31 |  | 99% | 0d | 2007-09-18 | 2007-10-31 | 34d | 2007-09-18 | 2007-10-30 | 66.73d | 4d |  |  | 3011h | 3011h |
| 85 | 1.7.1 | 需求调研以及需求收集表讨论 |  | 3.38d | 2007-09-18 A | 2007-09-21 A |  | 100% |  | 2007-09-18 | 2007-09-21 | 3.38d | 2007-09-18 | 2007-09-21 |  |  | start no earlier than 2007-09-18 | 姜雪芬; 金鹏爱; 林啸; 罗海明; 施懿斓; 魏致晟; 徐佳文; 袁远 | 216h | 216h |
| 86 | 1.7.2 | 用户需求分析 |  | 6.62d | 2007-09-21 A | 2007-09-30 A | 85 | 100% |  | 2007-09-21 | 2007-10-30 | 29.62d | 2007-09-21 | 2007-10-30 |  |  | finish no earlier than 2007-09-30 | 姜雪芬; 金鹏爱; 林啸; 罗海明; 施懿斓; 魏致晟; 袁远 | 371h | 371h |
| 87 | 1.7.3 | **系统需求分析** |  | 26d | 2007-09-27 A | 2007-10-30 A |  | 100% |  | 2007-10-08 | 2007-10-30 | 18d | 2007-10-08 | 2007-10-19 |  |  |  |  | 2368h | 2368h |
| 88 | 1.7.3.1 | **第一队** |  | 26d | 2007-09-27 A | 2007-10-30 A |  | 100% |  | 2007-10-08 | 2007-10-30 | 18d | 2007-10-08 | 2007-10-19 |  |  |  | 魏致晟; 罗海明 | 768h | 768h |
| 89 | 1.7.3.1.1 | 日常管理 |  | 18d | 2007-10-08 A | 2007-10-30 A |  | 100% |  | 2007-10-08 | 2007-10-30 | 18d | 2007-10-08 | 2007-10-19 |  |  | finish no earlier than 2007-10-30 | 魏致晟 | 144h | 144h |
| 90 | 1.7.3.1.2 | 安全管理 |  | 26d | 2007-09-27 A | 2007-10-30 A |  | 100% |  | 2007-10-08 | 2007-10-30 | 18d | 2007-10-08 | 2007-10-19 |  |  | finish no earlier than 2007-10-30 | 罗海明 | 208h | 208h |
| 91 | 1.7.3.2 | **第二队** |  | 26d | 2007-09-27 A | 2007-10-30 A |  | 100% |  | 2007-10-08 | 2007-10-30 | 18d | 2007-10-08 | 2007-10-19 |  |  |  | 金鹏爱; 袁远 | 768h | 768h |
| 92 | 1.7.3.2.1 | 客户管理 |  | 26d | 2007-09-27 A | 2007-10-30 A |  | 100% |  | 2007-10-08 | 2007-10-30 | 18d | 2007-10-08 | 2007-10-19 |  |  | finish no earlier than 2007-10-30 | 袁远 | 208h | 208h |
| 93 | 1.7.3.2.2 | 合同管理 |  | 18d | 2007-10-08 A | 2007-10-30 A |  | 100% |  | 2007-10-08 | 2007-10-30 | 18d | 2007-10-08 | 2007-10-19 |  |  | finish no earlier than 2007-10-30 | 金鹏爱 | 144h | 144h |
| 94 | 1.7.3.3 | **第三队** |  | 26d | 2007-09-27 A | 2007-10-30 A |  | 100% |  | 2007-10-08 | 2007-10-30 | 18d | 2007-10-08 | 2007-10-19 |  |  |  | 林啸; 姜雪芬 | 832h | 832h |
| 95 | 1.7.3.3.1 | 物质管理 |  | 26d | 2007-09-27 A | 2007-10-30 A |  | 100% |  | 2007-10-08 | 2007-10-30 | 18d | 2007-10-08 | 2007-10-19 |  |  | finish no earlier than 2007-10-30 | 林啸; 姜雪芬 | 416h | 416h |
| 96 | 1.7.4 | 系统需求说明书评审 | milestone | 1d | 2007-10-31 A | 2007-10-31 A | 89 | 100% |  | 2007-10-31 | 2007-10-31 | 1d | 2007-10-23 | 2007-10-23 |  |  | start no earlier than 2007-10-31 | 姜雪芬; 金鹏爱; 林啸; 罗海明; 施懿斓; 徐佳文; 张万军 | 56h | 56h |
| 97 | 1.7.5 | 需求基线（验证、审计） | milestone | 0d | 2007-10-31 | 2007-10-31 | 96 |  |  | 2007-10-31 | 2007-10-31 | 0d | 2007-10-24 | 2007-10-24 | 66.73d |  |  | 徐佳文 |  |  |
| 98 | 1.7.6 | 里程碑评审 | milestone | 0h | 2007-10-30 A | 2007-10-30 A |  | 100% |  | 2007-10-30 | 2007-10-30 | 0h | 2007-10-30 | 2007-10-30 |  |  | start no earlier than 2007-10-30 | 姜雪芬; 金鹏爱; 林啸; 罗海明; 施懿斓; 徐佳文; 张万军 |  |  |

| ID | WBS | Task | Type | Duration | Start | Finish | Predecessors | Complete | Remaining | Baseline start | Baseline finish | Baseline duration | Baseline 1 start | Baseline 1 finish | Total slack | Free slack | Constraint | Resources | Work | Actual work |
| --- | --- | --- | --- | --- | --- | --- | --- | --- | --- | --- | --- | --- | --- | --- | --- | --- | --- | --- | --- | --- |
| 99 | 1.8 | **项目策划** |  | 28d | 2007-10-08 A | 2007-11-11 |  | 99% | 0d | 2007-10-08 | 2007-11-11 | 28d | 2007-10-08 | 2007-11-06 | 60d |  |  |  | 409.6h | 409.6h |
| 100 | 1.8.1 | WBS工作分解 |  | 2d | 2007-10-08 A | 2007-10-09 A |  | 100% |  | 2007-10-08 | 2007-10-09 | 2d | 2007-10-08 | 2007-10-09 |  |  | start no earlier than 2007-10-08 | 施懿斓 | 16h | 16h |
| 101 | 1.8.2 | 项目估算 |  | 9d | 2007-10-24 A | 2007-11-04 A |  | 100% |  | 2007-10-24 | 2007-11-04 | 9d | 2007-10-24 | 2007-11-01 |  |  | finish no earlier than 2007-11-04 | 姜雪芬; 施懿斓; 袁远; 金鹏爱 [20%]; 林啸 [20%]; 罗海明 [20%]; 魏致晟 [20%]; 徐佳文 [20%] | 89.6h | 89.6h |
| 102 | 1.8.3 | 细化项目开发计划书 |  | 6d | 2007-11-05 A | 2007-11-11 A | 101 | 100% |  | 2007-11-07 | 2007-11-11 | 4d | 2007-11-01 | 2007-11-04 |  |  | finish no earlier than 2007-11-11 | 施懿斓 | 48h | 48h |
| 103 | 1.8.4 | 细化SCM计划 |  | 6d | 2007-11-04 A | 2007-11-09 A | 102 | 100% |  | 2007-11-06 | 2007-11-09 | 4d | 2007-11-04 | 2007-11-05 |  |  | finish no earlier than 2007-11-09 | 徐佳文 | 48h | 48h |
| 104 | 1.8.5 | 细化SQA计划 |  | 9d | 2007-10-31 A | 2007-11-09 A |  | 100% |  | 2007-11-06 | 2007-11-09 | 4d | 2007-10-31 | 2007-10-31 |  |  | finish no earlier than 2007-11-09 | 徐佳文 | 72h | 72h |
| 105 | 1.8.6 | 编写测试计划 |  | 1d | 2007-10-31 A | 2007-10-31 A |  | 100% |  | 2007-10-31 | 2007-10-31 | 1d | 2007-10-31 | 2007-10-31 |  |  | start no earlier than 2007-10-31 | 袁远; 姜雪芬 | 16h | 16h |
| 106 | 1.8.7 | 项目开发计划内部讨论 |  | 1d | 2007-11-02 A | 2007-11-02 A |  | 100% |  | 2007-11-01 | 2007-11-02 | 1.13d | 2007-11-01 | 2007-11-02 |  |  | start no earlier than 2007-11-02 | 姜雪芬; 金鹏爱; 林啸; 罗海明; 施懿斓; 魏致晟; 徐佳文; 袁远 | 64h | 64h |
| 107 | 1.8.8 | 项目开发计划（风险计划、QA计划、CM计划）评审 |  | 1d | 2007-11-05 A | 2007-11-05 A | 106 | 100% |  | 2007-11-05 | 2007-11-05 | 1d | 2007-11-05 | 2007-11-05 |  |  | start no earlier than 2007-11-05 | 姜雪芬; 金鹏爱; 林啸; 罗海明; 施懿斓; 徐佳文; 张万军 | 56h | 56h |
| 108 | 1.8.9 | 阶段进度报告 | milestone | 0d | 2007-11-05 | 2007-11-05 |  |  |  | 2007-11-05 | 2007-11-05 | 0d | 2007-11-05 | 2007-11-05 | 64d | 1d | start no earlier than 2007-11-05 | 施懿斓 |  |  |
| 109 | 1.8.10 | 里程碑评审 | milestone | 0h | 2007-11-06 | 2007-11-06 | 108 |  |  | 2007-11-05 | 2007-11-05 | 0h | 2007-11-06 | 2007-11-06 | 65d |  | start no earlier than 2007-11-06 | 姜雪芬; 金鹏爱; 林啸; 罗海明; 施懿斓; 魏致晟; 徐佳文; 袁远; 张万军 |  |  |
| 110 | 1.9 | **系统设计** |  | 63d? | 2007-11-06 A | 2008-01-21 |  | 51% | 31.09d? | 2007-11-06 | 2008-01-22 | 61d? | 2007-11-06 | 2008-01-24 | 2d |  |  |  | 5996h | 3310.13h |
| 111 | 1.9.1 | **概要设计** |  | 47d? | 2007-11-06 A | 2008-01-03 | 84 | 95% | 2.27d? | 2007-11-08 | 2007-12-09 | 25d? | 2007-11-06 | 2007-11-26 | 18d |  |  | 施懿斓 [50%]; 金鹏爱; 林啸; 罗海明; 魏致晟 | 3384h | 3158.13h |
| 112 | 1.9.1.1 | 技术架构的提取 |  | 11d | 2007-11-26 A | 2007-12-09 A |  | 100% |  | 2007-11-08 | 2007-12-09 | 25d? | 2007-11-06 | 2007-11-18 |  |  | finish no earlier than 2007-12-09 | 林啸; 魏致晟 | 176h | 176h |
| 113 | 1.9.1.2 | 数据结构设计&实体类，类图的例子 |  | 27d | 2007-11-06 A | 2007-12-09 A |  | 100% |  | 2007-11-13 | 2007-12-09 | 21d? | 2007-11-06 | 2007-11-09 |  |  | finish no earlier than 2007-12-09 | 金鹏爱; 林啸 [50%]; 罗海明 [50%]; 魏致晟 [50%] | 540h | 540h |
| 114 | 1.9.1.3 | 数据原子操作类DAL |  | 9d | 2007-11-20 A | 2007-12-02 A |  | 100% |  | 2007-11-20 | 2007-11-23 | 4d? | 2007-11-20 | 2007-11-23 |  |  | finish no earlier than 2007-12-02 | 金鹏爱 | 72h | 72h |
| 115 | 1.9.1.4 | 实体类设计 |  | 4d | 2007-11-20 A | 2007-11-25 A |  | 100% |  | 2007-11-20 | 2007-11-26 | 5d | 2007-11-20 | 2007-11-26 |  |  | finish no earlier than 2007-11-25 | 魏致晟 | 32h | 32h |
| 116 | 1.9.1.5 | 界面设计 |  | 35d | 2007-11-20 A | 2008-01-03 A |  | 100% |  | 2007-11-20 | 2007-11-26 | 5d? | 2007-11-20 | 2007-11-26 |  |  | finish no earlier than 2008-01-03 | 袁远 | 280h | 280h |
| 117 | 1.9.1.6 | 细化概要设计 |  | 6d? | 2007-11-18 | 2007-11-23 |  |  |  | 2007-11-18 | 2007-11-26 | 7d? | 2007-11-18 | 2007-11-23 | 49d |  | finish no earlier than 2007-11-23 | 罗海明; 金鹏爱; 魏致晟 | 144h |  |
| 118 | 1.9.1.7 | 需求规格说明书审查并产生（审查清单） |  | 7d | 2007-11-20 A | 2007-11-28 A |  | 100% |  | 2007-11-20 | 2007-11-28 | 7d? | 2007-11-20 | 2007-11-26 |  |  | finish no earlier than 2007-11-28 | 姜雪芬 | 56h | 56h |
| 119 | 1.9.1.8 | 系统需求规格说明书的变更 |  | 24d | 2007-11-26 A | 2007-12-26 A |  | 100% |  | 2007-11-26 | 2007-12-09 | 11d? | 2007-11-26 | 2007-11-26 |  |  | start no earlier than 2007-11-26 | 金鹏爱; 施懿斓 [50%]; 徐佳文 [50%] | 384h | 384h |
| 120 | 1.9.1.9 | 配置开发环境 |  | 1d | 2007-11-26 A | 2007-11-26 A | 117 | 100% |  | 2007-11-27 | 2007-11-27 | 1d? | 2007-11-26 | 2007-11-26 |  |  |  | 魏致晟 | 8h | 8h |
| 121 | 1.9.2 | 搭建技术框架 |  | 18d | 2007-11-06 A | 2007-11-27 A |  | 100% |  | 2007-11-06 | 2007-11-16 | 10d? | 2007-11-06 | 2007-11-18 |  |  | finish no earlier than 2007-11-27 | 罗海明 | 144h | 144h |
| 122 | 1.9.3 | **检查开发环境** |  | 42d | 2007-12-03 | 2008-01-21 |  |  |  | 2007-12-03 | 2008-01-21 | 39d | 2007-12-03 | 2008-01-21 | 2d |  |  | 魏致晟 | 336h |  |
| 123 | 1.9.3.1 | 检查开发环境 1 |  | 1d | 2007-12-03 | 2007-12-03 |  |  |  | 2007-12-03 | 2007-12-03 | 1d | 2007-12-03 | 2007-12-03 | 44d |  | start no earlier than 2007-12-03 |  |  |  |
| 124 | 1.9.3.2 | 检查开发环境 2 |  | 1d | 2007-12-10 | 2007-12-10 |  |  |  | 2007-12-10 | 2007-12-10 | 1d | 2007-12-10 | 2007-12-10 | 38d |  | start no earlier than 2007-12-10 |  |  |  |
| 125 | 1.9.3.3 | 检查开发环境 3 |  | 1d | 2007-12-17 | 2007-12-17 |  |  |  | 2007-12-17 | 2007-12-17 | 1d | 2007-12-17 | 2007-12-17 | 33d |  | start no earlier than 2007-12-17 |  |  |  |
| 126 | 1.9.3.4 | 检查开发环境 4 |  | 1d | 2007-12-24 | 2007-12-24 |  |  |  | 2007-12-24 | 2007-12-24 | 1d | 2007-12-24 | 2007-12-24 | 28d |  | start no earlier than 2007-12-24 |  |  |  |
| 127 | 1.9.3.5 | 检查开发环境 5 |  | 1d | 2007-12-31 | 2007-12-31 |  |  |  | 2007-12-31 | 2007-12-31 | 1d | 2007-12-31 | 2007-12-31 | 22d |  | start no earlier than 2007-12-31 |  |  |  |
| 128 | 1.9.3.6 | 检查开发环境 6 |  | 1d | 2008-01-07 | 2008-01-07 |  |  |  | 2008-01-07 | 2008-01-07 | 1d | 2008-01-07 | 2008-01-07 | 16d |  | start no earlier than 2008-01-07 |  |  |  |
| 129 | 1.9.3.7 | 检查开发环境 7 |  | 1d | 2008-01-14 | 2008-01-14 |  |  |  | 2008-01-14 | 2008-01-14 | 1d | 2008-01-14 | 2008-01-14 | 10d |  | start no earlier than 2008-01-14 |  |  |  |
| 130 | 1.9.3.8 | 检查开发环境 8 |  | 1d | 2008-01-21 | 2008-01-21 |  |  |  | 2008-01-21 | 2008-01-21 | 1d | 2008-01-21 | 2008-01-21 | 2d |  | start no earlier than 2008-01-21 |  |  |  |
| 131 | 1.9.4 | 实施与测试计划初稿 |  | 1d | 2007-11-27 A | 2007-11-27 A |  | 100% |  | 2007-11-27 | 2007-11-27 | 1d? | 2007-11-27 | 2007-11-27 |  |  | start no earlier than 2007-11-27 | 魏致晟 | 8h | 8h |

Notes:
- 101: 估算内容有：项目规模、工作量、关键计算机资源、普通资源（人力、设备等）、成本、风险；

| ID | WBS | Task | Duration | Start | Finish | Predecessors | Complete | Remaining | Baseline start | Baseline finish | Baseline duration | Baseline 1 start | Baseline 1 finish | Total slack | Free slack | Constraint | Deadline | Resources | Work | Actual work |
| --- | --- | --- | --- | --- | --- | --- | --- | --- | --- | --- | --- | --- | --- | --- | --- | --- | --- | --- | --- | --- |
| 132 | 1.9.5 | **技术框架具体实现（权限&员工信息的查、增加、修改、删除）** | 20d? | 2007-11-28 | 2007-12-24 |  |  |  | 2007-11-28 | 2007-12-24 | 20d? | 2007-11-28 | 2007-12-24 | 27d |  |  |  | 罗海明 | 320h |  |
| 133 | 1.9.5.1 | 框架的权限 | 11d? | 2007-11-28 | 2007-12-11 |  |  |  | 2007-11-28 | 2007-12-11 | 11d? | 2007-11-28 | 2007-12-12 | 30d | 3d | start no earlier than 2007-11-28 |  | 罗海明 | 88h |  |
| 134 | 1.9.5.2 | 员工模块（查、增加、修改、删除） | 8d? | 2007-12-13 | 2007-12-24 |  |  |  | 2007-12-13 | 2007-12-24 | 8d? | 2007-12-13 | 2007-12-24 | 25d |  | start no earlier than 2007-12-13 |  | 罗海明 | 64h |  |
| 135 | 1.9.5.3 | 框架进入VSS，检验框架 | 1d? | 2007-12-24 | 2007-12-24 |  |  |  | 2007-12-24 | 2007-12-24 | 1d? | 2007-12-24 | 2007-12-24 | 25d |  | start no earlier than 2007-12-24 |  | 魏致晟 | 8h |  |
| 136 | 1.9.6 | 系统详细设计 | 6d | 2007-12-17 | 2007-12-24 | 133 |  |  | 2007-12-11 | 2007-12-11 | 0d | 2007-12-13 | 2008-01-24 | 27d |  | finish no earlier than 2007-12-24 |  | 林啸; 施懿斓 [50%]; 姜雪芬; 袁远; 徐佳文 [50%] | 192h |  |
| 137 | 1.9.7 | 实现与测试 | 19d? | 2007-11-26 | 2007-12-19 |  |  |  | 2007-11-26 | 2008-01-22 | 45d? | 2007-11-26 | 2008-01-23 | 28d |  | finish no earlier than 2007-12-19 | 2008-01-23 | 施懿斓 [50%]; 徐佳文 [50%]; 金鹏爱; 姜雪芬; 罗海明; 袁远; 魏致晟; 周科存; 林啸 | 1216h |  |
| 138 | 1.9.8 | 用户操作手册 | 35d? | 2007-11-27 | 2008-01-09 |  |  |  | 2007-12-10 | 2008-01-21 | 33d? | 2007-11-27 | 2008-01-09 | 13d |  | finish no earlier than 2008-01-09 |  | 徐佳文 | 280h |  |
| 139 | 1.9.9 | 安装说明 | 35d? | 2007-11-19 | 2008-01-02 |  |  |  | 2007-11-19 | 2008-01-01 | 33d? | 2007-11-19 | 2008-01-02 | 17d |  | finish no earlier than 2008-01-02 |  |  |  |  |
| 140 | 1.9.10 | 系统设计说明书评审 | 1d | 2007-11-26 | 2007-11-26 |  |  |  | 2007-11-26 | 2007-11-26 | 0d | 2007-11-26 | 2007-11-26 | 46d |  | start no earlier than 2007-11-26 |  | 姜雪芬; 金鹏爱; 林啸; 罗海明; 施懿斓; 徐佳文; 张万军 | 56h |  |
| 141 | 1.9.11 | 详细设计基线（验证、审计） | 1d | 2007-11-27 | 2007-11-27 |  |  |  | 2007-11-27 | 2007-11-27 | 0d | 2007-11-27 | 2007-11-27 | 47d |  | finish no earlier than 2007-11-27 |  | 徐佳文 | 8h |  |
| 142 | 1.9.12 | 阶段进度报告 | 2d | 2007-11-26 | 2007-11-27 |  |  |  | 2007-11-26 | 2007-11-26 | 0d | 2007-11-26 | 2007-11-27 | 45d |  | start no earlier than 2007-11-26 |  | 施懿斓 | 16h |  |
| 143 | 1.9.13 | 里程碑评审 | 4h | 2007-12-03 | 2007-12-03 |  |  |  | 2007-12-03 | 2007-12-03 | 0h | 2007-12-03 | 2007-12-03 | 41.5d |  | start no earlier than 2007-12-03 |  | 姜雪芬; 金鹏爱; 林啸; 罗海明; 施懿斓; 魏致晟; 徐佳文; 袁远; 张万军 | 36h |  |
| 144 | 1.10 | **系统编码** | 44d? | 2007-12-03 A | 2008-01-23 |  | 94% | 2.48d? | 2007-11-26 | 2008-01-24 | 47d? | 2007-11-23 | 2008-01-24 | 0d |  |  |  |  | 12108h | 10577.7h |
| 145 | 1.10.1 | 编码测试安排 | 5d? | 2007-12-03 A | 2007-12-07 |  | 50% | 2.5d? | 2007-12-03 | 2007-12-07 | 5d? | 2007-12-03 | 2007-12-07 | 39d |  | start no earlier than 2007-12-03 |  | 罗海明 | 40h | 20h |
| 146 | 1.10.2 | 编写存储过程 | 5d | 2007-12-03 A | 2007-12-07 A |  | 100% |  | 2007-12-03 | 2007-12-09 | 6d? | 2007-12-03 | 2007-12-07 |  |  | start no earlier than 2007-12-03 |  | 魏致晟 | 40h | 40h |
| 147 | 1.10.3 | 添加注释 | 5d? | 2007-12-03 A | 2007-12-07 A |  | 100% |  | 2007-12-03 | 2007-12-07 | 5d? | 2007-12-03 | 2007-12-07 |  |  | start no earlier than 2007-12-03 |  | 林啸 | 40h | 40h |
| 148 | 1.10.4 | **系统管理** | 22d? | 2007-12-03 A | 2007-12-29 A |  | 100% |  | 2007-12-03 | 2007-12-31 | 22d? | 2007-12-03 | 2007-12-31 |  |  |  |  |  |  |  |
| 149 | 1.10.4.1 | **系统管理DAL层的代码编写** | 22d? | 2007-12-03 A | 2007-12-29 A |  | 100% |  | 2007-12-03 | 2007-12-31 | 22d? | 2007-12-03 | 2007-12-31 |  |  |  |  |  |  |  |
| 150 | 1.10.4.1.1 | 员工信息管理 | 21d? | 2007-12-03 A | 2007-12-28 A |  | 100% |  | 2007-12-03 | 2007-12-28 | 21d? | 2007-12-03 | 2007-12-31 |  |  | start no earlier than 2007-12-03 |  |  |  |  |
| 151 | 1.10.4.1.2 | 员工日志 | 16d? | 2007-12-10 A | 2007-12-29 A |  | 100% |  | 2007-12-10 | 2007-12-31 | 16d? | 2007-12-10 | 2007-12-31 |  |  | start no earlier than 2007-12-10 |  |  |  |  |
| 152 | 1.10.4.1.3 | 角色对照 | 16d? | 2007-12-10 A | 2007-12-29 A |  | 100% |  | 2007-12-10 | 2007-12-31 | 16d? | 2007-12-10 | 2007-12-31 |  |  | start no earlier than 2007-12-10 |  |  |  |  |
| 153 | 1.10.4.1.4 | 角色权限 | 16d? | 2007-12-10 A | 2007-12-29 A |  | 100% |  | 2007-12-10 | 2007-12-31 | 16d? | 2007-12-10 | 2007-12-31 |  |  | start no earlier than 2007-12-10 |  |  |  |  |
| 154 | 1.10.4.1.5 | 部门管理 | 16d? | 2007-12-10 A | 2007-12-29 A |  | 100% |  | 2007-12-10 | 2007-12-31 | 16d? | 2007-12-10 | 2007-12-31 |  |  | start no earlier than 2007-12-10 |  |  |  |  |
| 155 | 1.10.4.2 | **系统管理BLL层的代码编写** | 22d? | 2007-12-03 A | 2007-12-29 A |  | 100% |  | 2007-12-03 | 2007-12-31 | 22d? | 2007-12-03 | 2007-12-31 |  |  |  |  |  |  |  |
| 156 | 1.10.4.2.1 | 员工信息管理 | 21d? | 2007-12-03 A | 2007-12-28 A |  | 100% |  | 2007-12-03 | 2007-12-28 | 21d? | 2007-12-03 | 2007-12-31 |  |  | start no earlier than 2007-12-03 |  |  |  |  |
| 157 | 1.10.4.2.2 | 员工日志 | 16d? | 2007-12-10 A | 2007-12-29 A |  | 100% |  | 2007-12-10 | 2007-12-31 | 16d? | 2007-12-10 | 2007-12-31 |  |  | start no earlier than 2007-12-10 |  |  |  |  |
| 158 | 1.10.4.2.3 | 角色对照 | 16d? | 2007-12-10 A | 2007-12-29 A |  | 100% |  | 2007-12-10 | 2007-12-31 | 16d? | 2007-12-10 | 2007-12-31 |  |  | start no earlier than 2007-12-10 |  |  |  |  |
| 159 | 1.10.4.2.4 | 角色权限 | 16d? | 2007-12-10 A | 2007-12-29 A |  | 100% |  | 2007-12-10 | 2007-12-31 | 16d? | 2007-12-10 | 2007-12-31 |  |  | start no earlier than 2007-12-10 |  |  |  |  |
| 160 | 1.10.4.2.5 | 部门管理 | 16d? | 2007-12-10 A | 2007-12-29 A |  | 100% |  | 2007-12-10 | 2007-12-31 | 16d? | 2007-12-10 | 2007-12-31 |  |  | start no earlier than 2007-12-10 |  |  |  |  |

Notes:
- 136: 设计说明书，可以有：概要设计说明书 /或详细设计说明书。
- 142: 根据实际情况，可以在不同的阶段进行里程碑评审，小项目无需每个阶段定义里程碑。 / <3人月的项目可以不定义里程碑。
- 144: 按设计的内容进行工作安排

| ID | WBS | Task | Duration | Start | Finish | Complete | Baseline start | Baseline finish | Baseline duration | Baseline 1 start | Baseline 1 finish | Constraint |
| --- | --- | --- | --- | --- | --- | --- | --- | --- | --- | --- | --- | --- |
| 161 | 1.10.4.3 | **系统管理UI层的代码编写** | 22d? | 2007-12-03 A | 2007-12-29 A | 100% | 2007-12-03 | 2007-12-31 | 22d? | 2007-12-03 | 2007-12-31 |  |
| 162 | 1.10.4.3.1 | 员工信息管理 | 21d? | 2007-12-03 A | 2007-12-28 A | 100% | 2007-12-03 | 2007-12-28 | 21d? | 2007-12-03 | 2007-12-31 | start no earlier than 2007-12-03 |
| 163 | 1.10.4.3.2 | 员工日志 | 16d? | 2007-12-10 A | 2007-12-29 A | 100% | 2007-12-10 | 2007-12-31 | 16d? | 2007-12-10 | 2007-12-31 | start no earlier than 2007-12-10 |
| 164 | 1.10.4.3.3 | 角色对照 | 16d? | 2007-12-10 A | 2007-12-29 A | 100% | 2007-12-10 | 2007-12-31 | 16d? | 2007-12-10 | 2007-12-31 | start no earlier than 2007-12-10 |
| 165 | 1.10.4.3.4 | 角色权限 | 16d? | 2007-12-10 A | 2007-12-29 A | 100% | 2007-12-10 | 2007-12-31 | 16d? | 2007-12-10 | 2007-12-31 | start no earlier than 2007-12-10 |
| 166 | 1.10.4.3.5 | 部门管理 | 16d? | 2007-12-10 A | 2007-12-29 A | 100% | 2007-12-10 | 2007-12-31 | 16d? | 2007-12-10 | 2007-12-31 | start no earlier than 2007-12-10 |
| 167 | 1.10.4.4 | **系统管理DAL层的单元测试编写** | 22d? | 2007-12-03 A | 2007-12-29 A | 100% | 2007-12-03 | 2007-12-31 | 22d? | 2007-12-03 | 2007-12-31 |  |
| 168 | 1.10.4.4.1 | 员工信息管理 | 21d? | 2007-12-03 A | 2007-12-28 A | 100% | 2007-12-03 | 2007-12-28 | 21d? | 2007-12-03 | 2007-12-31 | start no earlier than 2007-12-03 |
| 169 | 1.10.4.4.2 | 员工日志 | 16d? | 2007-12-10 A | 2007-12-29 A | 100% | 2007-12-10 | 2007-12-31 | 16d? | 2007-12-10 | 2007-12-31 | start no earlier than 2007-12-10 |
| 170 | 1.10.4.4.3 | 角色对照 | 16d? | 2007-12-10 A | 2007-12-29 A | 100% | 2007-12-10 | 2007-12-31 | 16d? | 2007-12-10 | 2007-12-31 | start no earlier than 2007-12-10 |
| 171 | 1.10.4.4.4 | 角色权限 | 16d? | 2007-12-10 A | 2007-12-29 A | 100% | 2007-12-10 | 2007-12-31 | 16d? | 2007-12-10 | 2007-12-31 | start no earlier than 2007-12-10 |
| 172 | 1.10.4.4.5 | 部门管理 | 16d? | 2007-12-10 A | 2007-12-29 A | 100% | 2007-12-10 | 2007-12-31 | 16d? | 2007-12-10 | 2007-12-31 | start no earlier than 2007-12-10 |
| 173 | 1.10.4.5 | **系统管理BLL层的单元测试编写** | 22d? | 2007-12-03 A | 2007-12-29 A | 100% | 2007-12-03 | 2007-12-31 | 22d? | 2007-12-03 | 2007-12-31 |  |
| 174 | 1.10.4.5.1 | 员工信息管理 | 21d? | 2007-12-03 A | 2007-12-28 A | 100% | 2007-12-03 | 2007-12-28 | 21d? | 2007-12-03 | 2007-12-31 | start no earlier than 2007-12-03 |
| 175 | 1.10.4.5.2 | 员工日志 | 16d? | 2007-12-10 A | 2007-12-29 A | 100% | 2007-12-10 | 2007-12-31 | 16d? | 2007-12-10 | 2007-12-31 | start no earlier than 2007-12-10 |
| 176 | 1.10.4.5.3 | 角色对照 | 16d? | 2007-12-10 A | 2007-12-29 A | 100% | 2007-12-10 | 2007-12-31 | 16d? | 2007-12-10 | 2007-12-31 | start no earlier than 2007-12-10 |
| 177 | 1.10.4.5.4 | 角色权限 | 16d? | 2007-12-10 A | 2007-12-29 A | 100% | 2007-12-10 | 2007-12-31 | 16d? | 2007-12-10 | 2007-12-31 | start no earlier than 2007-12-10 |
| 178 | 1.10.4.5.5 | 部门管理 | 16d? | 2007-12-10 A | 2007-12-29 A | 100% | 2007-12-10 | 2007-12-31 | 16d? | 2007-12-10 | 2007-12-31 | start no earlier than 2007-12-10 |
| 179 | 1.10.4.6 | **系统管理UI层的单元测试编写** | 22d? | 2007-12-03 A | 2007-12-29 A | 100% | 2007-12-03 | 2007-12-31 | 22d? | 2007-12-03 | 2007-12-31 |  |
| 180 | 1.10.4.6.1 | 员工信息管理 | 21d? | 2007-12-03 A | 2007-12-28 A | 100% | 2007-12-03 | 2007-12-28 | 21d? | 2007-12-03 | 2007-12-31 | start no earlier than 2007-12-03 |
| 181 | 1.10.4.6.2 | 员工日志 | 16d? | 2007-12-10 A | 2007-12-29 A | 100% | 2007-12-10 | 2007-12-31 | 16d? | 2007-12-10 | 2007-12-31 | start no earlier than 2007-12-10 |
| 182 | 1.10.4.6.3 | 角色对照 | 16d? | 2007-12-10 A | 2007-12-29 A | 100% | 2007-12-10 | 2007-12-31 | 16d? | 2007-12-10 | 2007-12-31 | start no earlier than 2007-12-10 |
| 183 | 1.10.4.6.4 | 角色权限 | 16d? | 2007-12-10 A | 2007-12-29 A | 100% | 2007-12-10 | 2007-12-31 | 16d? | 2007-12-10 | 2007-12-31 | start no earlier than 2007-12-10 |
| 184 | 1.10.4.6.5 | 部门管理 | 16d? | 2007-12-10 A | 2007-12-29 A | 100% | 2007-12-10 | 2007-12-31 | 16d? | 2007-12-10 | 2007-12-31 | start no earlier than 2007-12-10 |

| ID | WBS | Task | Duration | Start | Finish | Predecessors | Complete | Baseline start | Baseline finish | Baseline duration | Baseline 1 start | Baseline 1 finish | Constraint |
| --- | --- | --- | --- | --- | --- | --- | --- | --- | --- | --- | --- | --- | --- |
| 185 | 1.10.5 | **物流管理** | 16d? | 2007-12-10 A | 2007-12-29 A | 146 | 100% | 2007-12-10 | 2007-12-31 | 16d? | 2007-12-10 | 2007-12-31 |  |
| 186 | 1.10.5.1 | **物流管理DAL层的代码编写** | 16d? | 2007-12-10 A | 2007-12-29 A |  | 100% | 2007-12-10 | 2007-12-31 | 16d? | 2007-12-10 | 2007-12-31 |  |
| 187 | 1.10.5.1.1 | 需求计划 | 16d? | 2007-12-10 A | 2007-12-29 A |  | 100% | 2007-12-10 | 2007-12-31 | 16d? | 2007-12-10 | 2007-12-31 | start no earlier than 2007-12-10 |
| 188 | 1.10.5.1.2 | 计划审批 | 16d? | 2007-12-10 A | 2007-12-29 A |  | 100% | 2007-12-10 | 2007-12-31 | 16d? | 2007-12-10 | 2007-12-31 | start no earlier than 2007-12-10 |
| 189 | 1.10.5.1.3 | 发货申请 | 16d? | 2007-12-10 A | 2007-12-29 A |  | 100% | 2007-12-10 | 2007-12-31 | 16d? | 2007-12-10 | 2007-12-31 | start no earlier than 2007-12-10 |
| 190 | 1.10.5.1.4 | 出库发货 | 16d? | 2007-12-10 A | 2007-12-29 A |  | 100% | 2007-12-10 | 2007-12-31 | 16d? | 2007-12-10 | 2007-12-31 | start no earlier than 2007-12-10 |
| 191 | 1.10.5.1.5 | 存货维护 | 16d? | 2007-12-10 A | 2007-12-29 A |  | 100% | 2007-12-10 | 2007-12-31 | 16d? | 2007-12-10 | 2007-12-31 | start no earlier than 2007-12-10 |
| 192 | 1.10.5.2 | **物流管理BLL层的代码编写** | 16d? | 2007-12-10 A | 2007-12-29 A |  | 100% | 2007-12-10 | 2007-12-31 | 16d? | 2007-12-10 | 2007-12-31 |  |
| 193 | 1.10.5.2.1 | 需求计划 | 16d? | 2007-12-10 A | 2007-12-29 A |  | 100% | 2007-12-10 | 2007-12-31 | 16d? | 2007-12-10 | 2007-12-31 | start no earlier than 2007-12-10 |
| 194 | 1.10.5.2.2 | 计划审批 | 16d? | 2007-12-10 A | 2007-12-29 A |  | 100% | 2007-12-10 | 2007-12-31 | 16d? | 2007-12-10 | 2007-12-31 | start no earlier than 2007-12-10 |
| 195 | 1.10.5.2.3 | 发货申请 | 16d? | 2007-12-10 A | 2007-12-29 A |  | 100% | 2007-12-10 | 2007-12-31 | 16d? | 2007-12-10 | 2007-12-31 | start no earlier than 2007-12-10 |
| 196 | 1.10.5.2.4 | 出库发货 | 16d? | 2007-12-10 A | 2007-12-29 A |  | 100% | 2007-12-10 | 2007-12-31 | 16d? | 2007-12-10 | 2007-12-31 | start no earlier than 2007-12-10 |
| 197 | 1.10.5.2.5 | 存货维护 | 16d? | 2007-12-10 A | 2007-12-29 A |  | 100% | 2007-12-10 | 2007-12-31 | 16d? | 2007-12-10 | 2007-12-31 | start no earlier than 2007-12-10 |
| 198 | 1.10.5.3 | **物流管理UI层的代码编写** | 16d? | 2007-12-10 A | 2007-12-29 A |  | 100% | 2007-12-10 | 2007-12-31 | 16d? | 2007-12-10 | 2007-12-31 |  |
| 199 | 1.10.5.3.1 | 需求计划 | 16d? | 2007-12-10 A | 2007-12-29 A |  | 100% | 2007-12-10 | 2007-12-31 | 16d? | 2007-12-10 | 2007-12-31 | start no earlier than 2007-12-10 |
| 200 | 1.10.5.3.2 | 计划审批 | 16d? | 2007-12-10 A | 2007-12-29 A |  | 100% | 2007-12-10 | 2007-12-31 | 16d? | 2007-12-10 | 2007-12-31 | start no earlier than 2007-12-10 |
| 201 | 1.10.5.3.3 | 发货申请 | 16d? | 2007-12-10 A | 2007-12-29 A |  | 100% | 2007-12-10 | 2007-12-31 | 16d? | 2007-12-10 | 2007-12-31 | start no earlier than 2007-12-10 |
| 202 | 1.10.5.3.4 | 出库发货 | 16d? | 2007-12-10 A | 2007-12-29 A |  | 100% | 2007-12-10 | 2007-12-31 | 16d? | 2007-12-10 | 2007-12-31 | start no earlier than 2007-12-10 |
| 203 | 1.10.5.3.5 | 存货维护 | 16d? | 2007-12-10 A | 2007-12-29 A |  | 100% | 2007-12-10 | 2007-12-31 | 16d? | 2007-12-10 | 2007-12-31 | start no earlier than 2007-12-10 |
| 204 | 1.10.5.4 | **物流管理DAL层的单元测试编写** | 16d? | 2007-12-10 A | 2007-12-29 A |  | 100% | 2007-12-10 | 2007-12-31 | 16d? | 2007-12-10 | 2007-12-31 |  |
| 205 | 1.10.5.4.1 | 需求计划 | 16d? | 2007-12-10 A | 2007-12-29 A |  | 100% | 2007-12-10 | 2007-12-31 | 16d? | 2007-12-10 | 2007-12-31 | start no earlier than 2007-12-10 |
| 206 | 1.10.5.4.2 | 计划审批 | 16d? | 2007-12-10 A | 2007-12-29 A |  | 100% | 2007-12-10 | 2007-12-31 | 16d? | 2007-12-10 | 2007-12-31 | start no earlier than 2007-12-10 |
| 207 | 1.10.5.4.3 | 发货申请 | 16d? | 2007-12-10 A | 2007-12-29 A |  | 100% | 2007-12-10 | 2007-12-31 | 16d? | 2007-12-10 | 2007-12-31 | start no earlier than 2007-12-10 |
| 208 | 1.10.5.4.4 | 出库发货 | 16d? | 2007-12-10 A | 2007-12-29 A |  | 100% | 2007-12-10 | 2007-12-31 | 16d? | 2007-12-10 | 2007-12-31 | start no earlier than 2007-12-10 |
| 209 | 1.10.5.4.5 | 存货维护 | 16d? | 2007-12-10 A | 2007-12-29 A |  | 100% | 2007-12-10 | 2007-12-31 | 16d? | 2007-12-10 | 2007-12-31 | start no earlier than 2007-12-10 |

| ID | WBS | Task | Duration | Start | Finish | Complete | Baseline start | Baseline finish | Baseline duration | Baseline 1 start | Baseline 1 finish | Constraint | Resources | Work | Actual work |
| --- | --- | --- | --- | --- | --- | --- | --- | --- | --- | --- | --- | --- | --- | --- | --- |
| 210 | 1.10.5.5 | **物流管理BLL层的单元测试编写** | 16d? | 2007-12-10 A | 2007-12-29 A | 100% | 2007-12-10 | 2007-12-31 | 16d? | 2007-12-10 | 2007-12-31 |  |  |  |  |
| 211 | 1.10.5.5.1 | 需求计划 | 16d? | 2007-12-10 A | 2007-12-29 A | 100% | 2007-12-10 | 2007-12-31 | 16d? | 2007-12-10 | 2007-12-31 | start no earlier than 2007-12-10 |  |  |  |
| 212 | 1.10.5.5.2 | 计划审批 | 16d? | 2007-12-10 A | 2007-12-29 A | 100% | 2007-12-10 | 2007-12-31 | 16d? | 2007-12-10 | 2007-12-31 | start no earlier than 2007-12-10 |  |  |  |
| 213 | 1.10.5.5.3 | 发货申请 | 16d? | 2007-12-10 A | 2007-12-29 A | 100% | 2007-12-10 | 2007-12-31 | 16d? | 2007-12-10 | 2007-12-31 | start no earlier than 2007-12-10 |  |  |  |
| 214 | 1.10.5.5.4 | 出库发货 | 16d? | 2007-12-10 A | 2007-12-29 A | 100% | 2007-12-10 | 2007-12-31 | 16d? | 2007-12-10 | 2007-12-31 | start no earlier than 2007-12-10 |  |  |  |
| 215 | 1.10.5.5.5 | 存货维护 | 16d? | 2007-12-10 A | 2007-12-29 A | 100% | 2007-12-10 | 2007-12-31 | 16d? | 2007-12-10 | 2007-12-31 | start no earlier than 2007-12-10 |  |  |  |
| 216 | 1.10.5.6 | **物流管理UI层的单元测试编写** | 16d? | 2007-12-10 A | 2007-12-29 A | 100% | 2007-12-10 | 2007-12-31 | 16d? | 2007-12-10 | 2007-12-31 |  |  |  |  |
| 217 | 1.10.5.6.1 | 需求计划 | 16d? | 2007-12-10 A | 2007-12-29 A | 100% | 2007-12-10 | 2007-12-31 | 16d? | 2007-12-10 | 2007-12-31 | start no earlier than 2007-12-10 |  |  |  |
| 218 | 1.10.5.6.2 | 计划审批 | 16d? | 2007-12-10 A | 2007-12-29 A | 100% | 2007-12-10 | 2007-12-31 | 16d? | 2007-12-10 | 2007-12-31 | start no earlier than 2007-12-10 |  |  |  |
| 219 | 1.10.5.6.3 | 发货申请 | 16d? | 2007-12-10 A | 2007-12-29 A | 100% | 2007-12-10 | 2007-12-31 | 16d? | 2007-12-10 | 2007-12-31 | start no earlier than 2007-12-10 |  |  |  |
| 220 | 1.10.5.6.4 | 出库发货 | 16d? | 2007-12-10 A | 2007-12-29 A | 100% | 2007-12-10 | 2007-12-31 | 16d? | 2007-12-10 | 2007-12-31 | start no earlier than 2007-12-10 |  |  |  |
| 221 | 1.10.5.6.5 | 存货维护 | 16d? | 2007-12-10 A | 2007-12-29 A | 100% | 2007-12-10 | 2007-12-31 | 16d? | 2007-12-10 | 2007-12-31 | start no earlier than 2007-12-10 |  |  |  |
| 222 | 1.10.6 | **合同管理** | 20d? | 2007-12-04 A | 2007-12-28 A | 100% | 2007-12-04 | 2007-12-28 | 20d? | 2007-12-04 | 2007-12-31 |  |  | 9600h | 9600h |
| 223 | 1.10.6.1 | **合同管理DAL层的代码编写** | 20d? | 2007-12-04 A | 2007-12-28 A | 100% | 2007-12-04 | 2007-12-28 | 20d? | 2007-12-04 | 2007-12-31 |  | 罗海明; 周科存 | 1600h | 1600h |
| 224 | 1.10.6.1.1 | 合同信息 | 20d? | 2007-12-04 A | 2007-12-28 A | 100% | 2007-12-04 | 2007-12-28 | 20d? | 2007-12-04 | 2007-12-31 | start no earlier than 2007-12-04 | 罗海明; 周科存 | 320h | 320h |
| 225 | 1.10.6.1.2 | 合同审核批准 | 20d? | 2007-12-04 A | 2007-12-28 A | 100% | 2007-12-04 | 2007-12-28 | 20d? | 2007-12-04 | 2007-12-31 | start no earlier than 2007-12-04 | 罗海明; 周科存 | 320h | 320h |
| 226 | 1.10.6.1.3 | 合同变更及批准 | 20d? | 2007-12-04 A | 2007-12-28 A | 100% | 2007-12-04 | 2007-12-28 | 20d? | 2007-12-04 | 2007-12-31 | start no earlier than 2007-12-04 | 罗海明; 周科存 | 320h | 320h |
| 227 | 1.10.6.1.4 | 合同安装、变更及批准 | 20d? | 2007-12-04 A | 2007-12-28 A | 100% | 2007-12-04 | 2007-12-28 | 20d? | 2007-12-04 | 2007-12-31 | start no earlier than 2007-12-04 | 罗海明; 周科存 | 320h | 320h |
| 228 | 1.10.6.2 | **合同管理BLL层的代码编写** | 20d? | 2007-12-04 A | 2007-12-28 A | 100% | 2007-12-04 | 2007-12-28 | 20d? | 2007-12-04 | 2007-12-31 |  | 罗海明; 周科存 | 1600h | 1600h |
| 229 | 1.10.6.2.1 | 合同信息 | 20d? | 2007-12-04 A | 2007-12-28 A | 100% | 2007-12-04 | 2007-12-28 | 20d? | 2007-12-04 | 2007-12-31 | start no earlier than 2007-12-04 | 罗海明; 周科存 | 320h | 320h |
| 230 | 1.10.6.2.2 | 合同审核批准 | 20d? | 2007-12-04 A | 2007-12-28 A | 100% | 2007-12-04 | 2007-12-28 | 20d? | 2007-12-04 | 2007-12-31 | start no earlier than 2007-12-04 | 罗海明; 周科存 | 320h | 320h |
| 231 | 1.10.6.2.3 | 合同变更及批准 | 20d? | 2007-12-04 A | 2007-12-28 A | 100% | 2007-12-04 | 2007-12-28 | 20d? | 2007-12-04 | 2007-12-31 | start no earlier than 2007-12-04 | 罗海明; 周科存 | 320h | 320h |
| 232 | 1.10.6.2.4 | 合同安装、变更及批准 | 20d? | 2007-12-04 A | 2007-12-28 A | 100% | 2007-12-04 | 2007-12-28 | 20d? | 2007-12-04 | 2007-12-31 | start no earlier than 2007-12-04 | 罗海明; 周科存 | 320h | 320h |
| 233 | 1.10.6.3 | **合同管理UI层的代码编写** | 20d? | 2007-12-04 A | 2007-12-28 A | 100% | 2007-12-04 | 2007-12-28 | 20d? | 2007-12-04 | 2007-12-31 |  | 罗海明; 周科存 | 1600h | 1600h |
| 234 | 1.10.6.3.1 | 合同信息 | 20d? | 2007-12-04 A | 2007-12-28 A | 100% | 2007-12-04 | 2007-12-28 | 20d? | 2007-12-04 | 2007-12-31 | start no earlier than 2007-12-04 | 罗海明; 周科存 | 320h | 320h |
| 235 | 1.10.6.3.2 | 合同审核批准 | 20d? | 2007-12-04 A | 2007-12-28 A | 100% | 2007-12-04 | 2007-12-28 | 20d? | 2007-12-04 | 2007-12-31 | start no earlier than 2007-12-04 | 罗海明; 周科存 | 320h | 320h |
| 236 | 1.10.6.3.3 | 合同变更及批准 | 20d? | 2007-12-04 A | 2007-12-28 A | 100% | 2007-12-04 | 2007-12-28 | 20d? | 2007-12-04 | 2007-12-31 | start no earlier than 2007-12-04 | 罗海明; 周科存 | 320h | 320h |
| 237 | 1.10.6.3.4 | 合同安装、变更及批准 | 20d? | 2007-12-04 A | 2007-12-28 A | 100% | 2007-12-04 | 2007-12-28 | 20d? | 2007-12-04 | 2007-12-31 | start no earlier than 2007-12-04 | 罗海明; 周科存 | 320h | 320h |

| ID | WBS | Task | Duration | Start | Finish | Complete | Baseline start | Baseline finish | Baseline duration | Baseline 1 start | Baseline 1 finish | Constraint | Resources | Work | Actual work |
| --- | --- | --- | --- | --- | --- | --- | --- | --- | --- | --- | --- | --- | --- | --- | --- |
| 238 | 1.10.6.4 | **合同管理DAL层的单元测试编写** | 20d? | 2007-12-04 A | 2007-12-28 A | 100% | 2007-12-04 | 2007-12-28 | 20d? | 2007-12-04 | 2007-12-31 |  | 罗海明; 周科存 | 1600h | 1600h |
| 239 | 1.10.6.4.1 | 合同信息 | 20d? | 2007-12-04 A | 2007-12-28 A | 100% | 2007-12-04 | 2007-12-28 | 20d? | 2007-12-04 | 2007-12-31 | start no earlier than 2007-12-04 | 罗海明; 周科存 | 320h | 320h |
| 240 | 1.10.6.4.2 | 合同审核批准 | 20d? | 2007-12-04 A | 2007-12-28 A | 100% | 2007-12-04 | 2007-12-28 | 20d? | 2007-12-04 | 2007-12-31 | start no earlier than 2007-12-04 | 罗海明; 周科存 | 320h | 320h |
| 241 | 1.10.6.4.3 | 合同变更及批准 | 20d? | 2007-12-04 A | 2007-12-28 A | 100% | 2007-12-04 | 2007-12-28 | 20d? | 2007-12-04 | 2007-12-31 | start no earlier than 2007-12-04 | 罗海明; 周科存 | 320h | 320h |
| 242 | 1.10.6.4.4 | 合同安装、变更及批准 | 20d? | 2007-12-04 A | 2007-12-28 A | 100% | 2007-12-04 | 2007-12-28 | 20d? | 2007-12-04 | 2007-12-31 | start no earlier than 2007-12-04 | 罗海明; 周科存 | 320h | 320h |
| 243 | 1.10.6.5 | **合同管理BLL层的单元测试编写** | 20d? | 2007-12-04 A | 2007-12-28 A | 100% | 2007-12-04 | 2007-12-28 | 20d? | 2007-12-04 | 2007-12-31 |  | 罗海明; 周科存 | 1600h | 1600h |
| 244 | 1.10.6.5.1 | 合同信息 | 20d? | 2007-12-04 A | 2007-12-28 A | 100% | 2007-12-04 | 2007-12-28 | 20d? | 2007-12-04 | 2007-12-31 | start no earlier than 2007-12-04 | 罗海明; 周科存 | 320h | 320h |
| 245 | 1.10.6.5.2 | 合同审核批准 | 20d? | 2007-12-04 A | 2007-12-28 A | 100% | 2007-12-04 | 2007-12-28 | 20d? | 2007-12-04 | 2007-12-31 | start no earlier than 2007-12-04 | 罗海明; 周科存 | 320h | 320h |
| 246 | 1.10.6.5.3 | 合同变更及批准 | 20d? | 2007-12-04 A | 2007-12-28 A | 100% | 2007-12-04 | 2007-12-28 | 20d? | 2007-12-04 | 2007-12-31 | start no earlier than 2007-12-04 | 罗海明; 周科存 | 320h | 320h |
| 247 | 1.10.6.5.4 | 合同安装、变更及批准 | 20d? | 2007-12-04 A | 2007-12-28 A | 100% | 2007-12-04 | 2007-12-28 | 20d? | 2007-12-04 | 2007-12-31 | start no earlier than 2007-12-04 | 罗海明; 周科存 | 320h | 320h |
| 248 | 1.10.6.6 | **合同管理UI层的单元测试编写** | 20d? | 2007-12-04 A | 2007-12-28 A | 100% | 2007-12-04 | 2007-12-28 | 20d? | 2007-12-04 | 2007-12-31 |  | 罗海明; 周科存 | 1600h | 1600h |
| 249 | 1.10.6.6.1 | 合同信息 | 20d? | 2007-12-04 A | 2007-12-28 A | 100% | 2007-12-04 | 2007-12-28 | 20d? | 2007-12-04 | 2007-12-31 | start no earlier than 2007-12-04 | 罗海明; 周科存 | 320h | 320h |
| 250 | 1.10.6.6.2 | 合同审核批准 | 20d? | 2007-12-04 A | 2007-12-28 A | 100% | 2007-12-04 | 2007-12-28 | 20d? | 2007-12-04 | 2007-12-31 | start no earlier than 2007-12-04 | 罗海明; 周科存 | 320h | 320h |
| 251 | 1.10.6.6.3 | 合同变更及批准 | 20d? | 2007-12-04 A | 2007-12-28 A | 100% | 2007-12-04 | 2007-12-28 | 20d? | 2007-12-04 | 2007-12-31 | start no earlier than 2007-12-04 | 罗海明; 周科存 | 320h | 320h |
| 252 | 1.10.6.6.4 | 合同安装、变更及批准 | 20d? | 2007-12-04 A | 2007-12-28 A | 100% | 2007-12-04 | 2007-12-28 | 20d? | 2007-12-04 | 2007-12-31 | start no earlier than 2007-12-04 | 罗海明; 周科存 | 320h | 320h |
| 253 | 1.10.7 | **客户管理** | 16d? | 2007-12-10 A | 2007-12-29 A | 100% | 2007-12-10 | 2007-12-31 | 16d? | 2007-12-10 | 2007-12-31 |  |  |  |  |
| 254 | 1.10.7.1 | **客户管理DAL层的代码编写** | 16d? | 2007-12-10 A | 2007-12-29 A | 100% | 2007-12-10 | 2007-12-31 | 16d? | 2007-12-10 | 2007-12-31 |  |  |  |  |
| 255 | 1.10.7.1.1 | 客户信息 | 16d? | 2007-12-10 A | 2007-12-29 A | 100% | 2007-12-10 | 2007-12-31 | 16d? | 2007-12-10 | 2007-12-31 | start no earlier than 2007-12-10 |  |  |  |
| 256 | 1.10.7.1.2 | 业务收集 | 16d? | 2007-12-10 A | 2007-12-29 A | 100% | 2007-12-10 | 2007-12-31 | 16d? | 2007-12-10 | 2007-12-31 | start no earlier than 2007-12-10 |  |  |  |
| 257 | 1.10.7.2 | **客户管理BLL层的代码编写** | 16d? | 2007-12-10 A | 2007-12-29 A | 100% | 2007-12-10 | 2007-12-31 | 16d? | 2007-12-10 | 2007-12-31 |  |  |  |  |
| 258 | 1.10.7.2.1 | 客户信息 | 16d? | 2007-12-10 A | 2007-12-29 A | 100% | 2007-12-10 | 2007-12-31 | 16d? | 2007-12-10 | 2007-12-31 | start no earlier than 2007-12-10 |  |  |  |
| 259 | 1.10.7.2.2 | 业务收集 | 16d? | 2007-12-10 A | 2007-12-29 A | 100% | 2007-12-10 | 2007-12-31 | 16d? | 2007-12-10 | 2007-12-31 | start no earlier than 2007-12-10 |  |  |  |
| 260 | 1.10.7.3 | **客户管理UI层的代码编写** | 16d? | 2007-12-10 A | 2007-12-29 A | 100% | 2007-12-10 | 2007-12-31 | 16d? | 2007-12-10 | 2007-12-31 |  |  |  |  |
| 261 | 1.10.7.3.1 | 客户信息 | 16d? | 2007-12-10 A | 2007-12-29 A | 100% | 2007-12-10 | 2007-12-31 | 16d? | 2007-12-10 | 2007-12-31 | start no earlier than 2007-12-10 |  |  |  |
| 262 | 1.10.7.3.2 | 业务收集 | 16d? | 2007-12-10 A | 2007-12-29 A | 100% | 2007-12-10 | 2007-12-31 | 16d? | 2007-12-10 | 2007-12-31 | start no earlier than 2007-12-10 |  |  |  |

| ID | WBS | Task | Type | Duration | Start | Finish | Predecessors | Complete | Remaining | Baseline start | Baseline finish | Baseline duration | Baseline 1 start | Baseline 1 finish | Total slack | Constraint | Resources | Work | Actual work |
| --- | --- | --- | --- | --- | --- | --- | --- | --- | --- | --- | --- | --- | --- | --- | --- | --- | --- | --- | --- |
| 263 | 1.10.7.4 | **客户管理DAL层的单元测试编写** |  | 16d? | 2007-12-10 A | 2007-12-29 A |  | 100% |  | 2007-12-10 | 2007-12-31 | 16d? | 2007-12-10 | 2007-12-31 |  |  |  |  |  |
| 264 | 1.10.7.4.1 | 客户信息 |  | 16d? | 2007-12-10 A | 2007-12-29 A |  | 100% |  | 2007-12-10 | 2007-12-31 | 16d? | 2007-12-10 | 2007-12-31 |  | start no earlier than 2007-12-10 |  |  |  |
| 265 | 1.10.7.4.2 | 业务收集 |  | 16d? | 2007-12-10 A | 2007-12-29 A |  | 100% |  | 2007-12-10 | 2007-12-31 | 16d? | 2007-12-10 | 2007-12-31 |  | start no earlier than 2007-12-10 |  |  |  |
| 266 | 1.10.7.5 | **客户管理BLL层的单元测试编写** |  | 16d? | 2007-12-10 A | 2007-12-29 A |  | 100% |  | 2007-12-10 | 2007-12-31 | 16d? | 2007-12-10 | 2007-12-31 |  |  |  |  |  |
| 267 | 1.10.7.5.1 | 客户信息 |  | 16d? | 2007-12-10 A | 2007-12-29 A |  | 100% |  | 2007-12-10 | 2007-12-31 | 16d? | 2007-12-10 | 2007-12-31 |  | start no earlier than 2007-12-10 |  |  |  |
| 268 | 1.10.7.5.2 | 业务收集 |  | 16d? | 2007-12-10 A | 2007-12-29 A |  | 100% |  | 2007-12-10 | 2007-12-31 | 16d? | 2007-12-10 | 2007-12-31 |  | start no earlier than 2007-12-10 |  |  |  |
| 269 | 1.10.7.6 | **客户管理UI层的单元测试编写** |  | 16d? | 2007-12-10 A | 2007-12-29 A |  | 100% |  | 2007-12-10 | 2007-12-31 | 16d? | 2007-12-10 | 2007-12-31 |  |  |  |  |  |
| 270 | 1.10.7.6.1 | 客户信息 |  | 16d? | 2007-12-10 A | 2007-12-29 A |  | 100% |  | 2007-12-10 | 2007-12-31 | 16d? | 2007-12-10 | 2007-12-31 |  | start no earlier than 2007-12-10 |  |  |  |
| 271 | 1.10.7.6.2 | 业务收集 |  | 16d? | 2007-12-10 A | 2007-12-29 A |  | 100% |  | 2007-12-10 | 2007-12-31 | 16d? | 2007-12-10 | 2007-12-31 |  | start no earlier than 2007-12-10 |  |  |  |
| 272 | 1.10.8 | 学习集成测试用 |  | 23d | 2007-12-03 | 2007-12-31 |  |  |  | 2007-12-05 | 2008-01-24 | 40d | 2007-12-04 | 2008-01-24 | 21d | finish no earlier than 2007-12-31 | 姜雪芬 | 184h |  |
| 273 | 1.10.9 | Model层的修改 |  | 11d | 2007-12-03 A | 2007-12-16 A | 272SS | 100% |  | 2007-12-05 | 2008-01-11 | 30d | 2007-12-04 | 2008-01-11 |  | finish no earlier than 2007-12-16 | 魏致晟 | 88h | 88h |
| 274 | 1.10.10 | 技术架构的技术会议 |  | 1d | 2007-12-10 A | 2007-12-10 A |  | 100% |  | 2007-12-10 | 2007-12-13 | 4d | 2007-12-10 | 2007-12-13 |  | start no earlier than 2007-12-10 | 罗海明 | 8h | 8h |
| 275 | 1.10.11 | 如何使用TD的会议 |  | 1d | 2007-12-11 A | 2007-12-11 A |  | 100% |  | 2007-12-11 | 2007-12-11 | 1d | 2007-12-11 | 2007-12-11 |  | start no earlier than 2007-12-11 | 姜雪芬 | 8h | 8h |
| 276 | 1.10.12 | 命名规范的变更 |  | 4d? | 2007-12-11 A | 2007-12-14 A |  | 100% |  | 2007-12-11 | 2007-12-14 | 4d? |  |  |  | start no earlier than 2007-12-11 | 施懿斓; 罗海明; 魏致晟; 金鹏爱; 徐佳文 | 160h | 160h |
| 277 | 1.10.13 | 字典数据 |  | 1d | 2007-12-29 | 2007-12-29 | 222 |  |  |  |  |  |  |  | 22d |  | 金鹏爱 | 8h |  |
| 278 | 1.10.14 | BLL层的方法编写 修改UI层 |  | 2d? | 2007-12-31 | 2008-01-01 |  |  |  |  |  |  |  |  | 20d | start no earlier than 2007-12-31 | 金鹏爱 | 16h |  |
| 279 | 1.10.15 | BLL层的单元测试 |  | 3d? | 2007-12-29 A | 2008-01-01 A |  | 100% |  |  |  |  |  |  |  | start no earlier than 2007-12-29 | 姜雪芬; 魏致晟 | 48h | 48h |
| 280 | 1.10.16 | 权限控制文档 |  | 3d | 2007-12-29 A | 2008-01-01 A |  | 100% |  |  |  |  |  |  |  | start no earlier than 2007-12-29 | 罗海明 | 24h | 24h |
| 281 | 1.10.17 | 权限数据的填写 |  | 3d? | 2007-12-29 A | 2008-01-01 A |  | 100% |  |  |  |  |  |  |  | start no earlier than 2007-12-29 | 罗海明 | 24h | 24h |
| 282 | 1.10.18 | **页面编码** |  | 23d? | 2007-12-29 A | 2008-01-23 |  | 43% | 13.21d? |  |  |  |  |  | 0d |  | 施懿斓 [50%]; 金鹏爱; 罗海明; 林啸; 周科存 | 1820h | 517.71h |
| 283 | 1.10.18.1 | 员工信息的web编码 |  | 18d | 2007-12-29 A | 2008-01-18 A |  | 100% |  |  |  |  |  |  |  | finish no earlier than 2008-01-18 | 施懿斓 [50%] | 72h | 72h |
| 284 | 1.10.18.2 | 员工日志的web编码 |  | 14d | 2008-01-03 A | 2008-01-23 | 286 | 64% | 5d |  |  |  |  |  | 0d | finish no earlier than 2008-01-18 | 林啸 | 112h | 72h |
| 285 | 1.10.18.3 | 存货维护的web编码 |  | 6d | 2008-01-13 A | 2008-01-18 A |  | 100% |  |  |  |  |  |  |  | finish no earlier than 2008-01-18 | 林啸 | 48h | 48h |
| 286 | 1.10.18.4 | 数据字典的web编码 |  | 18d? | 2007-12-29 | 2008-01-18 |  |  |  |  |  |  |  |  | 0d | finish no earlier than 2008-01-18 | 罗海明 | 144h |  |
| 287 | 1.10.18.5 | 发货申请的web编码 | milestone | 0d | 2008-01-19 A | 2008-01-19 A | 283 | 100% |  |  |  |  |  |  |  |  | 罗海明 |  |  |
| 288 | 1.10.18.6 | 需求计划的web编码 |  | 16d | 2008-01-02 A | 2008-01-19 |  | 35% | 10.4d |  |  |  |  |  | 4d | finish no earlier than 2008-01-19 | 金鹏爱 | 128h | 44.8h |
| 289 | 1.10.18.7 | 库存查询的web编码 |  | 2d | 2008-01-18 A | 2008-01-19 A |  | 100% |  |  |  |  |  |  |  | finish no earlier than 2008-01-19 | 林啸 | 16h | 16h |
| 290 | 1.10.18.8 | 出库单信息的web编码 |  | 7d | 2008-01-13 A | 2008-01-19 |  | 14% | 6d |  |  |  |  |  | 4d | finish no earlier than 2008-01-19 | 金鹏爱 | 56h | 8h |
| 291 | 1.10.18.9 | 客户信息的web编码 |  | 2d | 2008-01-15 | 2008-01-16 |  |  |  |  |  |  |  |  | 7d | finish no earlier than 2008-01-16 | 周科存 | 16h |  |
| 292 | 1.10.18.10 | 业务收集的web编码 |  | 9d | 2008-01-10 A | 2008-01-19 A |  | 100% |  |  |  |  |  |  |  | finish no earlier than 2008-01-19 | 魏致晟 | 72h | 72h |
| 293 | 1.10.18.11 | 合同信息的web编码 |  | 16d | 2008-01-02 A | 2008-01-19 |  | 25% | 12d |  |  |  |  |  | 4d | finish no earlier than 2008-01-19 | 周科存 | 128h | 32h |
| 294 | 1.10.18.12 | 合同安装的web编码 |  | 8d | 2008-01-11 A | 2008-01-19 |  | 13% | 7d |  |  |  |  |  | 4d | finish no earlier than 2008-01-19 | 周科存 | 64h | 8h |
| 295 | 1.10.18.13 | 合同变更的web编码 |  | 7d | 2008-01-13 A | 2008-01-19 |  | 14% | 6d |  |  |  |  |  | 4d | finish no earlier than 2008-01-19 | 周科存 | 56h | 8h |
| 296 | 1.10.18.14 | 系统功能的web编码 |  | 5d | 2008-01-04 | 2008-01-09 |  |  |  |  |  |  |  |  | 13d | start no earlier than 2008-01-04 | 罗海明 | 40h |  |
| 297 | 1.10.18.15 | 角色权限的web编码 |  | 3d | 2008-01-11 | 2008-01-14 |  |  |  |  |  |  |  |  | 9d | start no earlier than 2008-01-11 | 罗海明 | 24h |  |
| 298 | 1.10.18.16 | 角色对照 |  | 1d | 2008-01-14 | 2008-01-14 |  |  |  |  |  |  |  |  | 9d | start no earlier than 2008-01-14 | 罗海明 | 8h |  |
| 299 | 1.10.18.17 | 部门权限 |  | 1d | 2008-01-15 | 2008-01-15 |  |  |  |  |  |  |  |  | 8d | start no earlier than 2008-01-15 | 罗海明 | 8h |  |

Notes:
- 274: 按系统设计说明书中的内容进行编码安排。

| ID | WBS | Task | Duration | Start | Finish | Predecessors | Complete | Remaining | Baseline start | Baseline finish | Baseline duration | Baseline 1 start | Baseline 1 finish | Total slack | Constraint | Resources | Work | Actual work |
| --- | --- | --- | --- | --- | --- | --- | --- | --- | --- | --- | --- | --- | --- | --- | --- | --- | --- | --- |
| 300 | 1.11 | **集成测试** | 61d? | 2007-11-06 A | 2008-01-19 |  | 52% | 29.37d? | 2007-11-06 | 2007-11-16 | 10d? | 2007-11-06 | 2007-11-18 | 4d |  |  | 300h | 128h |
| 301 | 1.11.1 | TD测试使用说明书 | 10d | 2007-11-06 A | 2007-11-16 A |  | 100% |  | 2007-11-06 | 2007-11-16 | 10d | 2007-11-06 | 2007-11-18 |  | start no earlier than 2007-11-06 | 姜雪芬 | 80h | 80h |
| 302 | 1.11.2 | 初步测试计划 | 10d? | 2007-11-06 | 2007-11-16 |  |  |  | 2007-11-06 | 2007-11-16 | 10d? | 2007-11-06 | 2007-11-18 | 55d | start no earlier than 2007-11-06 | 袁远 | 80h |  |
| 303 | 1.11.3 | 集成测试 | 5d | 2008-01-15 A | 2008-01-19 |  | 80% | 1d |  |  |  |  |  | 4d | finish no earlier than 2008-01-19 | 袁远; 魏致晟 [50%] | 60h | 48h |
| 304 | 1.11.4 | bug修复 | 2d? | 2008-01-16 | 2008-01-17 |  |  |  |  |  |  |  |  | 6d | start no earlier than 2008-01-16 | 林啸; 金鹏爱; 魏致晟; 周科存; 罗海明 | 80h |  |
| 305 | 1.12 | **系统测试** | 2d | 2008-01-18 | 2008-01-19 |  |  |  | 2007-09-24 | 2008-01-19 | 93d? | 2007-09-24 | 2008-01-19 | 4d |  | 姜雪芬; 袁远 | 128h |  |
| 306 | 1.12.1 | 系统测试 | 2d | 2008-01-18 | 2008-01-19 |  |  |  | 2008-01-07 | 2008-01-14 | 6d | 2008-01-07 | 2008-01-14 | 4d | start no earlier than 2008-01-18 | 姜雪芬; 袁远 | 32h |  |
| 307 | 1.12.2 | bug修复 | 2d | 2008-01-18 | 2008-01-19 |  |  |  | 2008-01-07 | 2008-01-19 | 11d | 2008-01-07 | 2008-01-19 | 4d | start no earlier than 2008-01-18 | 金鹏爱; 林啸; 罗海明; 魏致晟 | 64h |  |
| 308 | 1.12 | **项目总结** | 4d | 2008-01-17 A | 2008-01-20 |  | 50% | 2d | 2008-01-19 | 2008-01-24 | 5d? | 2008-01-19 | 2008-01-24 | 3d |  |  | 136h | 48h |
| 309 | 1.13.1 | 项目总结报告 | 3d | 2008-01-17 A | 2008-01-19 A |  | 100% |  | 2008-01-19 | 2008-01-22 | 3d | 2008-01-19 | 2008-01-22 |  | finish no earlier than 2008-01-19 | 施懿斓; 徐佳文 | 48h | 48h |
| 310 | 1.13.2 | 项目总结会议、项目验收 | 1d | 2008-01-20 | 2008-01-20 | 309 |  |  | 2008-01-23 | 2008-01-23 | 1d | 2008-01-23 | 2008-01-23 | 3d | start no earlier than 2008-01-20 | 姜雪芬; 金鹏爱; 林啸; 罗海明; 施懿斓; 魏致晟; 徐佳文; 袁远; 张万军 | 72h |  |
| 311 | 1.13.3 | 产品发布（基线） | 1d | 2008-01-20 | 2008-01-20 | 310 |  |  | 2008-01-24 | 2008-01-24 | 1d | 2008-01-24 | 2008-01-24 | 3d | finish no earlier than 2008-01-20 | 徐佳文 | 8h |  |
| 312 | 1.13.4 | 项目移交 | 1d | 2008-01-20 | 2008-01-20 |  |  |  | 2008-01-24 | 2008-01-24 | 1d? | 2008-01-24 | 2008-01-24 | 3d | start no earlier than 2008-01-20 | 施懿斓 | 8h |  |

Notes:
- 300: 按设计的内容进行工作安排
- 306: 按系统设计说明书中的内容进行编码安排。
- 308: 按设计的内容进行工作安排
- 309: 按系统设计说明书中的内容进行编码安排。
